# 附件四人员名单及基本情况

Schedule from MS Project, 2003-10-17 to 2004-05-12, A marks actual dates.

## Calendars

- 标准: Mon-Fri 08:00-12:00, 13:00-17:00; Sat-Sun off. Exceptions (off unless hours are given): 2003-10-18 to 2003-10-19 08:00-12:00, 13:00-17:00, 2003-10-25 to 2003-10-26 08:00-12:00, 13:00-17:00, 2003-11-01 08:00-12:00, 13:00-17:00, 2003-11-08 to 2003-11-09 08:00-12:00, 13:00-17:00, 2003-11-14 to 2003-11-16 08:00-12:00, 13:00-17:00, 2003-11-22 to 2003-11-23 08:00-12:00, 13:00-17:00, 2003-11-29 to 2003-11-30 08:00-12:00, 13:00-17:00, 2003-12-06 to 2003-12-07 08:00-12:00, 13:00-17:00, 2003-12-13 to 2003-12-14 08:00-12:00, 13:00-17:00, 2003-12-20 to 2003-12-21 08:00-12:00, 13:00-17:00, 2003-12-27 to 2003-12-28 08:00-12:00, 13:00-17:00, 2004-01-03 to 2004-01-04 08:00-12:00, 13:00-17:00, 2004-01-10 to 2004-01-11 08:00-12:00, 13:00-17:00, 2004-01-18 08:00-12:00, 13:00-17:00, 2004-01-24 to 2004-01-25 08:00-12:00, 13:00-17:00, 2004-01-31 08:00-12:00, 13:00-17:00.

## Resources

| Resource |
| --- |
| 童海涛（项目经理） |
| 叶昊 |
| 马越 |
| SCCB成员 |
| 童海涛 |
| 测试人员 |
| 用户组织 |
| SCCB成员（组长：谭石禹） |
| 用户代表 |
| 用户 |
| 郑先全 |
| 华良东 |
| 胡铮 |
| 王华 |
| Sunflow |
| Sunflow人员 |
| 编程人员A（） |
| 编程人员A（熟悉JAVA |
| ORACLE编程） |
| 许晓俊 |
| 曹锋 |
| 禹进轩 |
| 许朝锋 |
| 禹敬轩 |
| 曹锋（适当支持） |
| 胡诤 |
| 孙勇 |

## Schedule

| ID | WBS | Task | Duration | Start | Finish | Predecessors | Complete | Remaining | Baseline start | Baseline finish | Baseline duration | Total slack | Constraint | Deadline | Resources | Work | Actual work |
| --- | --- | --- | --- | --- | --- | --- | --- | --- | --- | --- | --- | --- | --- | --- | --- | --- | --- |
| 1 | PD | **项目研发过程** | 178d? | 2003-10-17 08:00 A | 2004-05-12 17:00 |  | 59% | 72.98d? | 2003-10-17 08:00 | 2004-05-12 17:00 | 175d? | 0d |  |  |  | 24101.7h | 10924.2h |
| 2 | 1.1 | **项目立项** | 16d | 2003-11-03 08:00 A | 2003-11-18 17:00 A |  | 100% |  | 2003-11-03 08:00 | 2003-11-18 17:00 | 16d |  |  |  |  | 32h | 32h |
| 3 | 1.1.1 | 编写立项报告 | 1d | 2003-11-03 08:00 A | 2003-11-03 17:00 A |  | 100% |  | 2003-11-03 08:00 | 2003-11-03 17:00 | 1d |  | start no earlier than 2003-11-03 08:00 | 2003-11-03 17:00 | 童海涛（项目经理） | 8h | 8h |
| 4 | 1.1.2 | 立项报告评审 | 0.5d | 2003-11-04 08:00 A | 2003-11-05 17:00 A | 3 | 100% |  | 2003-11-04 08:00 | 2003-11-05 17:00 | 0.5d |  | finish no earlier than 2003-11-05 17:00 | 2003-11-06 17:00 | 童海涛; 马越; SCCB成员（组长：谭石禹） | 12h | 12h |
| 5 | 1.1.3 | 修改立项报告 | 13d | 2003-11-06 08:00 A | 2003-11-18 17:00 A |  | 100% |  | 2003-11-06 08:00 | 2003-11-18 17:00 | 13d |  |  |  | 童海涛（项目经理） [3.8%] | 4h | 4h |
| 6 | 1.1.4 | 立项报告复核 | 12d | 2003-11-07 08:00 A | 2003-11-18 17:00 A |  | 100% |  | 2003-11-07 08:00 | 2003-11-18 17:00 | 12d |  |  |  | 童海涛（项目经理） [4.2%] | 4h | 4h |
| 7 | 1.1.5 | 立项完成 | 12d | 2003-11-07 08:00 A | 2003-11-18 17:00 A |  | 100% |  | 2003-11-07 08:00 | 2003-11-18 17:00 | 12d |  | finish no earlier than 2003-11-18 17:00 |  | 童海涛（项目经理） | 4h | 4h |
| 8 | PD_RD | **需求分析** | 17.5d | 2003-10-20 08:00 A | 2003-11-07 12:00 A |  | 100% |  | 2003-10-20 08:00 | 2003-11-07 12:00 | 17.5d |  |  |  |  | 508.8h | 508.8h |
| 9 | 1.2.1 | **需求调研** | 5d | 2003-10-20 08:00 A | 2003-10-24 17:00 A |  | 100% |  | 2003-10-20 08:00 | 2003-10-24 17:00 | 5d |  |  |  |  | 112h | 112h |
| 10 | 1.2.1.1 | 与规划局齐科接触，并搭建好工作环境（办公环境、硬件环境、软件环境等） | 0.5d | 2003-10-20 08:00 A | 2003-10-20 12:00 A |  | 100% |  | 2003-10-20 08:00 | 2003-10-20 12:00 | 0.5d |  |  |  | 童海涛（项目经理）; 叶昊; 郑先全 | 12h | 12h |
| 11 | 1.2.1.2 | 对规划局的档案做了初步的了解 | 0.5d | 2003-10-21 08:00 A | 2003-10-21 12:00 A |  | 100% |  | 2003-10-21 08:00 | 2003-10-21 12:00 | 0.5d |  |  |  | 童海涛（项目经理）; 叶昊; 郑先全 | 12h | 12h |
| 12 | 1.2.1.3 | 针对规划局档案采购书上提到的功能对齐科做了逐一的调研整理 | 1.5d | 2003-10-21 08:00 A | 2003-10-22 12:00 A |  | 100% |  | 2003-10-21 08:00 | 2003-10-22 12:00 | 1.5d |  | must finish on 2003-10-21 17:00 |  | 童海涛（项目经理）; 郑先全; 叶昊 | 24h | 24h |
| 13 | 1.2.1.4 | 明确调研的对象与时间，并向规划局提交了需求阶段工作计划（包括时间段、需求问题清单、双方参与人员等等）；确定需求调研报告模板 | 0.5d | 2003-10-22 08:00 A | 2003-10-22 12:00 A |  | 100% |  | 2003-10-22 08:00 | 2003-10-22 12:00 | 0.5d |  |  |  | 童海涛（项目经理） | 4h | 4h |
| 14 | 1.2.1.5 | 档案样本、相关资料的收集和咨询 | 0.5d | 2003-10-22 08:00 A | 2003-10-22 12:00 A |  | 100% |  | 2003-10-22 08:00 | 2003-10-22 12:00 | 0.5d |  | start no earlier than 2003-10-22 08:00 |  | 童海涛（项目经理）; 郑先全 | 12h | 12h |
| 15 | 1.2.1.6 | 到库房了解情况，到档案室了解了档案编目流程，并提出了我们所需要的档案样品 | 1d | 2003-10-23 08:00 A | 2003-10-23 17:00 A |  | 100% |  | 2003-10-23 08:00 | 2003-10-23 17:00 | 1d |  | start no earlier than 2003-10-23 08:00 |  | 童海涛（项目经理）; 郑先全 | 24h | 24h |
| 16 | 1.2.1.7 | 总结了调研，并具体到各类档案样本中发现问题逐一到齐科、王科等处寻求解决，划分了各自的模块任务 | 1d | 2003-10-24 08:00 A | 2003-10-24 17:00 A |  | 100% |  | 2003-10-24 08:00 | 2003-10-24 17:00 | 1d |  | start no earlier than 2003-10-24 08:00 |  | 童海涛（项目经理）; 郑先全 | 24h | 24h |
| 17 | PD_RD_01 | **需求规格说明书的编写** | 5d | 2003-10-27 08:00 A | 2003-10-31 17:00 A | 255FS-2d | 100% |  | 2003-10-27 08:00 | 2003-10-31 17:00 | 5d |  |  |  | 童海涛（项目经理）; 叶昊; 郑先全 | 304.8h | 304.8h |
| 18 | 1.2.2.1 | **档案采集子系统** | 2d | 2003-10-27 08:00 A | 2003-10-28 17:00 A |  | 100% |  | 2003-10-27 08:00 | 2003-10-28 17:00 | 2d |  |  |  |  | 19.2h | 19.2h |
| 19 | 1.2.2.1.1 | 档案著录、档案录入、档案检查、档案归档、档案的复查整理 | 1d | 2003-10-27 08:00 A | 2003-10-27 17:00 A |  | 100% |  | 2003-10-27 08:00 | 2003-10-27 17:00 | 1d |  | finish no earlier than 2003-10-27 17:00 |  | 童海涛（项目经理） [20%]; 郑先全 | 9.6h | 9.6h |
| 20 | 1.2.2.1.2 | 资料登记、资料录入、资料检查、资料归档、资料复查整理 | 1d | 2003-10-28 08:00 A | 2003-10-28 17:00 A | 19 | 100% |  | 2003-10-28 08:00 | 2003-10-28 17:00 | 1d |  | finish no earlier than 2003-11-28 17:00 |  | 童海涛（项目经理） [20%]; 郑先全 | 9.6h | 9.6h |
| 21 | 1.2.2.2 | **档案资源子系统** | 3d | 2003-10-27 08:00 A | 2003-10-29 17:00 A |  | 100% |  | 2003-10-27 08:00 | 2003-10-29 17:00 | 3d |  |  |  |  | 28.8h | 28.8h |
| 22 | 1.2.2.2.1 | 全宗管理 | 1d | 2003-10-27 08:00 A | 2003-10-27 17:00 A |  | 100% |  | 2003-10-27 08:00 | 2003-10-27 17:00 | 1d |  | start no earlier than 2003-10-27 08:00 |  | 叶昊; 童海涛（项目经理） [20%] | 9.6h | 9.6h |
| 23 | 1.2.2.2.2 | 档案信息管理 | 1d | 2003-10-28 08:00 A | 2003-10-28 17:00 A | 22 | 100% |  | 2003-10-28 08:00 | 2003-10-28 17:00 | 1d |  |  |  | 童海涛（项目经理） [20%]; 叶昊 | 9.6h | 9.6h |
| 24 | 1.2.2.2.3 | 库房管理 | 0.5d | 2003-10-29 13:00 A | 2003-10-29 17:00 A | 23 | 100% |  | 2003-10-29 13:00 | 2003-10-29 17:00 | 0.5d |  | finish no earlier than 2003-10-29 17:00 |  | 童海涛（项目经理） [20%]; 叶昊 | 4.8h | 4.8h |
| 25 | 1.2.2.2.4 | 规范化管理、外部查询管理 | 0.5d | 2003-10-29 08:00 A | 2003-10-29 12:00 A |  | 100% |  | 2003-10-29 08:00 | 2003-10-29 12:00 | 0.5d |  | start no earlier than 2003-10-29 08:00 |  | 童海涛（项目经理） [20%]; 叶昊 | 4.8h | 4.8h |

| ID | WBS | Task | Duration | Start | Finish | Predecessors | Complete | Remaining | Baseline start | Baseline finish | Baseline duration | Total slack | Constraint | Resources | Work | Actual work |
| --- | --- | --- | --- | --- | --- | --- | --- | --- | --- | --- | --- | --- | --- | --- | --- | --- |
| 26 | 1.2.2.3 | **档案利用子系统** | 2.5d | 2003-10-29 08:00 A | 2003-10-31 12:00 A |  | 100% |  | 2003-10-29 08:00 | 2003-10-31 12:00 | 2.5d |  |  |  | 35.2h | 35.2h |
| 27 | 1.2.2.3.1 | 查阅管理 | 1d | 2003-10-29 08:00 A | 2003-10-29 17:00 A |  | 100% |  | 2003-10-29 08:00 | 2003-10-29 17:00 | 1d |  |  | 童海涛（项目经理）; 郑先全 | 16h | 16h |
| 28 | 1.2.2.3.2 | 借阅管理 | 1d | 2003-10-30 08:00 A | 2003-10-30 17:00 A |  | 100% |  | 2003-10-30 08:00 | 2003-10-30 17:00 | 1d |  |  | 童海涛（项目经理） [20%]; 郑先全 | 9.6h | 9.6h |
| 29 | 1.2.2.3.3 | 补证管理、收费管理 | 0.5d | 2003-10-31 08:00 A | 2003-10-31 12:00 A |  | 100% |  | 2003-10-31 08:00 | 2003-10-31 12:00 | 0.5d |  |  | 童海涛（项目经理） [20%]; 郑先全 | 4.8h | 4.8h |
| 30 | 1.2.2.3.4 | 综合查询、发布管理 | 0.5d | 2003-10-31 08:00 A | 2003-10-31 12:00 A |  | 100% |  | 2003-10-31 08:00 | 2003-10-31 12:00 | 0.5d |  | start no earlier than 2003-10-31 08:00 | 童海涛（项目经理） [20%]; 郑先全 | 4.8h | 4.8h |
| 31 | 1.2.2.4 | **系统维护子系统** | 2d | 2003-10-30 08:00 A | 2003-10-31 17:00 A |  | 100% |  | 2003-10-30 08:00 | 2003-10-31 17:00 | 2d |  |  |  | 61.6h | 61.6h |
| 32 | 1.2.2.4.1 | 登录管理、日志管理 | 2d | 2003-10-30 08:00 A | 2003-10-31 17:00 A |  | 100% |  | 2003-10-30 08:00 | 2003-10-31 17:00 | 2d |  | start no earlier than 2003-10-29 08:00 | 童海涛（项目经理） [20%]; 叶昊; 华良东 | 35.2h | 35.2h |
| 33 | 1.2.2.4.2 | 用户权限管理、系统设计管理 | 0.5d | 2003-10-30 08:00 A | 2003-10-30 12:00 A |  | 100% |  | 2003-10-30 08:00 | 2003-10-30 12:00 | 0.5d |  | start no earlier than 2003-10-30 08:00 | 童海涛（项目经理） [20%]; 叶昊; 华良东 | 8.8h | 8.8h |
| 34 | 1.2.2.4.3 | 数据库管理、存储设备管理 | 0.5d | 2003-10-31 08:00 A | 2003-10-31 12:00 A |  | 100% |  | 2003-10-31 08:00 | 2003-10-31 12:00 | 0.5d |  | start no earlier than 2003-10-31 08:00 | 童海涛（项目经理） [20%]; 叶昊; 华良东 | 8.8h | 8.8h |
| 35 | 1.2.2.4.4 | 标准化管理、数据字典管理 | 0.5d | 2003-10-31 08:00 A | 2003-10-31 12:00 A |  | 100% |  | 2003-10-31 08:00 | 2003-10-31 12:00 | 0.5d |  | start no earlier than 2003-10-31 08:00 | 童海涛（项目经理） [20%]; 叶昊; 华良东 | 8.8h | 8.8h |
| 36 | PD_RD_04 | 需求规格说明书汇总 | 0.5d | 2003-10-31 08:00 A | 2003-10-31 12:00 A |  | 100% |  | 2003-10-31 08:00 | 2003-10-31 12:00 | 0.5d |  | start no earlier than 2003-10-31 08:00 | 童海涛; 叶昊; 郑先全; 华良东 | 16h | 16h |
| 37 | 1.2.4 | 需求规格说明书的评审 | 0.5d | 2003-11-06 08:00 A | 2003-11-06 12:00 A |  | 100% |  | 2003-11-06 08:00 | 2003-11-06 12:00 | 0.5d |  | start no earlier than 2003-11-06 08:00 | 童海涛（项目经理）; 叶昊; 郑先全; 华良东; SCCB成员（组长：谭石禹）; 马越 | 24h | 24h |
| 38 | 1.2.5 | 需求规格说明书的修改 | 1.5d | 2003-11-03 08:00 A | 2003-11-04 12:00 A |  | 100% |  | 2003-11-03 08:00 | 2003-11-04 12:00 | 1.5d |  | start no earlier than 2003-11-03 08:00 | 童海涛（项目经理）; 叶昊; 郑先全; 华良东 | 48h | 48h |
| 39 | 1.2.6 | 需求规格说明书完成 | 0.5d | 2003-11-07 08:00 A | 2003-11-07 12:00 A | 37 | 100% |  | 2003-11-07 08:00 | 2003-11-07 12:00 | 0.5d |  |  | 童海涛（项目经理） | 4h | 4h |
| 40 | PD_SD | **系统设计** | 94d? | 2003-11-07 08:00 A | 2004-02-12 17:00 |  | 74% | 23.98d? | 2003-11-07 08:00 | 2004-01-28 17:00 | 80d? | 64d |  | 童海涛（项目经理）; 叶昊; 郑先全; 华良东; SCCB成员（组长：谭石禹）; 马越 | 21272h | 10321.8h |
| 41 | PD_SD_GD | **概要设计** | 20d? | 2003-11-07 08:00 A | 2003-11-26 17:00 |  | 99% | 0d? | 2003-11-07 08:00 | 2003-11-26 17:00 | 20d? | 0d |  | 童海涛（项目经理）; 叶昊; 郑先全; 华良东; SCCB成员（组长：谭石禹）; 马越 | 2360.96h | 1400.96h |
| 42 | PD_SD_GD_01 | **概要设计说明书的编写** | 5d | 2003-11-07 08:00 A | 2003-11-11 17:00 A | 36 | 100% |  | 2003-11-07 08:00 | 2003-11-11 17:00 | 5d |  |  | 童海涛; 叶昊 | 268.16h | 268.16h |
| 43 | 1.3.1.1.1 | **档案采集子系统** | 2.5d | 2003-11-09 08:00 A | 2003-11-11 12:00 A |  | 100% |  | 2003-11-09 08:00 | 2003-11-11 12:00 | 2.5d |  |  | 童海涛（项目经理） [20%]; 郑先全 | 40.32h | 40.32h |
| 44 | 1.3.1.1.1.1 | 需求概述、子系统划分 | 0.3d | 2003-11-09 08:00 A | 2003-11-09 10:24 A |  | 100% |  | 2003-11-09 08:00 | 2003-11-09 10:24 | 0.3d |  | start no earlier than 2003-11-10 08:00 | 童海涛（项目经理）; 郑先全 | 4.8h | 4.8h |
| 45 | 1.3.1.1.1.2 | 模块功能和处理流程 | 0.7d | 2003-11-10 08:00 A | 2003-11-10 14:36 A |  | 100% |  | 2003-11-10 08:00 | 2003-11-10 14:36 | 0.7d |  | finish no earlier than 2003-11-11 17:00 | 童海涛（项目经理） [20%]; 郑先全 | 6.72h | 6.72h |
| 46 | 1.3.1.1.1.3 | 流程图、类图 | 1.5d | 2003-11-10 08:00 A | 2003-11-11 12:00 A |  | 100% |  | 2003-11-10 08:00 | 2003-11-11 12:00 | 1.5d |  | start no earlier than 2003-11-11 08:00 | 童海涛（项目经理） [20%]; 郑先全 | 14.4h | 14.4h |
| 47 | 1.3.1.1.2 | **档案资源子系统** | 3d | 2003-11-09 08:00 A | 2003-11-11 17:00 A |  | 100% |  | 2003-11-09 08:00 | 2003-11-11 17:00 | 3d |  |  | 童海涛（项目经理） [20%]; 叶昊 | 50.88h | 50.88h |
| 48 | 1.3.1.1.2.1 | 需求概述、子系统划分 | 0.3d | 2003-11-09 08:00 A | 2003-11-09 10:24 A |  | 100% |  | 2003-11-09 08:00 | 2003-11-09 10:24 | 0.3d |  | start no earlier than 2003-11-09 08:00 | 童海涛（项目经理） [20%]; 叶昊 | 2.88h | 2.88h |
| 49 | 1.3.1.1.2.2 | 模块功能和处理流程 | 1d | 2003-11-10 08:00 A | 2003-11-10 17:00 A |  | 100% |  | 2003-11-10 08:00 | 2003-11-10 17:00 | 1d |  | start no earlier than 2003-11-10 08:00 | 童海涛（项目经理） [20%]; 叶昊 | 9.6h | 9.6h |
| 50 | 1.3.1.1.2.3 | 流程图、类图 | 1d | 2003-11-11 08:00 A | 2003-11-11 17:00 A | 49 | 100% |  | 2003-11-11 08:00 | 2003-11-11 17:00 | 1d |  |  | 童海涛（项目经理） [20%]; 叶昊 | 9.6h | 9.6h |

| ID | WBS | Task | Duration | Start | Finish | Predecessors | Complete | Baseline start | Baseline finish | Baseline duration | Constraint | Resources | Work | Actual work |
| --- | --- | --- | --- | --- | --- | --- | --- | --- | --- | --- | --- | --- | --- | --- |
| 51 | 1.3.1.1.3 | **档案利用子系统** | 3d | 2003-11-09 08:00 A | 2003-11-11 17:00 A |  | 100% | 2003-11-09 08:00 | 2003-11-11 17:00 | 3d |  | 童海涛（项目经理） [20%]; 郑先全 | 50.88h | 50.88h |
| 52 | 1.3.1.1.3.1 | 需求概述、子系统划分 | 0.3d | 2003-11-09 08:00 A | 2003-11-09 10:24 A |  | 100% | 2003-11-09 08:00 | 2003-11-09 10:24 | 0.3d |  | 童海涛（项目经理） [20%]; 郑先全 | 2.88h | 2.88h |
| 53 | 1.3.1.1.3.2 | 模块功能和处理流程 | 1d | 2003-11-10 08:00 A | 2003-11-10 17:00 A |  | 100% | 2003-11-10 08:00 | 2003-11-10 17:00 | 1d |  | 童海涛（项目经理） [20%]; 郑先全 | 9.6h | 9.6h |
| 54 | 1.3.1.1.3.3 | 流程图、类图、状态变迁图 | 1d | 2003-11-11 08:00 A | 2003-11-11 17:00 A |  | 100% | 2003-11-11 08:00 | 2003-11-11 17:00 | 1d | start no earlier than 2003-11-11 08:00 | 童海涛（项目经理） [20%]; 郑先全 | 9.6h | 9.6h |
| 55 | 1.3.1.1.4 | **系统维护子系统** | 3d | 2003-11-09 08:00 A | 2003-11-11 17:00 A |  | 100% | 2003-11-09 08:00 | 2003-11-11 17:00 | 3d |  | 童海涛（项目经理） [20%]; 华良东 | 50.88h | 50.88h |
| 56 | 1.3.1.1.4.1 | 需求概述、子系统划分 | 0.3d | 2003-11-09 08:00 A | 2003-11-09 10:24 A |  | 100% | 2003-11-09 08:00 | 2003-11-09 10:24 | 0.3d | start no earlier than 2003-11-09 08:00 | 童海涛（项目经理） [20%]; 华良东 | 2.88h | 2.88h |
| 57 | 1.3.1.1.4.2 | 模块功能和处理流程 | 1d | 2003-11-10 08:00 A | 2003-11-10 17:00 A |  | 100% | 2003-11-10 08:00 | 2003-11-10 17:00 | 1d | finish no earlier than 2003-11-10 17:00 | 童海涛（项目经理） [20%]; 华良东 | 9.6h | 9.6h |
| 58 | 1.3.1.1.4.3 | 流程图、类图、状态变迁图 | 1d | 2003-11-11 08:00 A | 2003-11-11 17:00 A |  | 100% | 2003-11-11 08:00 | 2003-11-11 17:00 | 1d | start no earlier than 2003-11-11 08:00 | 童海涛（项目经理） [20%]; 华良东 | 9.6h | 9.6h |
| 59 | 1.3.1.1.5 | **软件接口** | 1.5d | 2003-11-07 08:00 A | 2003-11-08 12:00 A |  | 100% | 2003-11-07 08:00 | 2003-11-08 12:00 | 1.5d |  | 童海涛（项目经理） [20%]; 郑先全 | 27.2h | 27.2h |
| 60 | 1.3.1.1.5.1 | 与OA接口 | 0.5d | 2003-11-07 08:00 A | 2003-11-07 12:00 A |  | 100% | 2003-11-07 08:00 | 2003-11-07 12:00 | 0.5d | start no earlier than 2003-11-07 08:00 | 童海涛（项目经理）; 郑先全 | 8h | 8h |
| 61 | 1.3.1.1.5.2 | 与历史档案加工系统接口 | 0.5d | 2003-11-08 08:00 A | 2003-11-08 12:00 A |  | 100% | 2003-11-08 08:00 | 2003-11-08 12:00 | 0.5d | start no earlier than 2003-11-08 08:00 | 童海涛（项目经理） [20%]; 郑先全 | 4.8h | 4.8h |
| 62 | 1.3.1.2 | 概要设计说明书整合 | 0.5d | 2003-11-12 08:00 A | 2003-11-12 12:00 A |  | 100% | 2003-11-12 08:00 | 2003-11-12 12:00 | 0.5d | start no earlier than 2003-11-10 08:00 | 童海涛（项目经理） [20%]; 郑先全; 叶昊; 华良东 | 12.8h | 12.8h |
| 63 | 1.3.1.3 | 概要设计说明书的评审 | 0.5d | 2003-11-13 08:00 A | 2003-11-13 12:00 A |  | 100% | 2003-11-13 08:00 | 2003-11-13 12:00 | 0.5d | start no earlier than 2003-11-13 08:00 | SCCB成员（组长：谭石禹）; 童海涛（项目经理）; 叶昊; 郑先全; 华良东; 马越 | 24h | 24h |
| 64 | 1.3.1.4 | 概要设计说明书的修改 | 0.5d | 2003-11-14 08:00 A | 2003-11-14 12:00 A |  | 100% | 2003-11-14 08:00 | 2003-11-14 12:00 | 0.5d | start no earlier than 2003-11-14 08:00 | 童海涛（项目经理）; 叶昊; 郑先全; 华良东 | 16h | 16h |
| 65 | PD_SD_GD_02 | 数据库结构设计说明书的编写 | 4d | 2003-11-12 08:00 A | 2003-11-15 17:00 A | 42FS-5% | 100% | 2003-11-12 08:00 | 2003-11-15 17:00 | 4d | start no earlier than 2003-11-12 08:00 | 叶昊; 童海涛（项目经理）; 郑先全; 华良东 | 128h | 128h |
| 66 | PD_SD_GD_03 | 数据库设计说明书的评审 | 2d? | 2003-11-17 08:00 A | 2003-11-18 17:00 A | 42, 65 | 100% | 2003-11-17 08:00 | 2003-11-18 17:00 | 2d? | start no earlier than 2003-11-17 08:00 | 童海涛（项目经理）; 叶昊; 郑先全; 华良东 | 64h | 64h |
| 67 | PD_SD_GD_04 | 数据库设计说明书的修改 | 7d | 2003-11-19 08:00 A | 2003-11-25 17:00 A | 66 | 100% | 2003-11-19 08:00 | 2003-11-25 17:00 | 7d |  | 童海涛（项目经理） [21.4%]; 叶昊; 郑先全 [21.4%]; 华良东 | 44h | 44h |
| 68 | PD_SD_GD_05 | 概要设计说明书完成 | 0.5d | 2003-11-14 08:00 A | 2003-11-14 12:00 A |  | 100% | 2003-11-14 08:00 | 2003-11-14 12:00 | 0.5d | start no earlier than 2003-11-14 08:00 | 童海涛（项目经理）; 叶昊; 郑先全; 华良东 | 16h | 16h |
| 69 | 1.3.1.9 | 数据库设计说明书完成 | 0.5d? | 2003-11-26 08:00 A | 2003-11-26 12:00 A |  | 100% | 2003-11-26 08:00 | 2003-11-26 12:00 | 0.5d? | start no earlier than 2003-11-26 08:00 | 童海涛（项目经理）; 叶昊; 郑先全; 华良东 | 16h | 16h |
| 70 | 1.3.1.10 | **界面设计** | 9d? | 2003-11-18 08:00 A | 2003-11-26 17:00 A |  | 100% | 2003-11-18 08:00 | 2003-11-26 17:00 | 9d? |  | 童海涛（项目经理）; 胡铮; 叶昊; 郑先全; 华良东 | 656.4h | 656.4h |
| 71 | 1.3.1.10.1 | 总框架设计 | 4d | 2003-11-18 08:00 A | 2003-11-21 17:00 A |  | 100% | 2003-11-18 08:00 | 2003-11-21 17:00 | 4d | finish no earlier than 2003-11-21 17:00 | 童海涛（项目经理） [30%]; 胡铮; 叶昊 [20%]; 郑先全 [20%]; 王华 | 86.4h | 86.4h |
| 72 | 1.3.1.10.2 | 元素设计 | 9d | 2003-11-18 08:00 A | 2003-11-26 17:00 A |  | 100% | 2003-11-18 08:00 | 2003-11-26 17:00 | 9d | finish no earlier than 2003-11-26 17:00 | 童海涛（项目经理） [50%]; 胡铮 [50%]; 叶昊 [50%]; 郑先全 [50%]; 华良东 [50%]; 王华 [25%] | 198h | 198h |
| 73 | 1.3.1.10.3 | 总体原型整合 | 0.5d? | 2003-11-26 08:00 A | 2003-11-26 12:00 A |  | 100% | 2003-11-26 08:00 | 2003-11-26 12:00 | 0.5d? | start no earlier than 2003-11-26 08:00 | 童海涛（项目经理）; 胡铮; 王华 | 12h | 12h |
| 74 | 1.3.1.11 | **业务档案** | 3d | 2003-11-19 08:00 A | 2003-11-21 17:00 A |  | 100% | 2003-11-19 08:00 | 2003-11-21 17:00 | 3d |  | 童海涛（项目经理）; 叶昊; 郑先全; 华良东 | 124.4h | 124.4h |
| 75 | 1.3.1.11.1 | 需求调研 | 0.7d | 2003-11-19 08:00 A | 2003-11-19 14:36 A |  | 100% | 2003-11-19 08:00 | 2003-11-19 14:36 | 0.7d | start no earlier than 2003-11-19 08:00 | 童海涛（项目经理）; 叶昊 [50%] | 8.4h | 8.4h |
| 76 | 1.3.1.11.2 | 概要设计修改 | 1d | 2003-11-20 08:00 A | 2003-11-20 17:00 A |  | 100% | 2003-11-20 08:00 | 2003-11-20 17:00 | 1d | finish no earlier than 2003-11-20 17:00 | 童海涛（项目经理） [50%]; 叶昊 [50%]; 郑先全 [10%]; 华良东 [10%] | 9.6h | 9.6h |
| 77 | 1.3.1.11.3 | 数据库结构设计修改 | 1d | 2003-11-21 08:00 A | 2003-11-21 17:00 A |  | 100% | 2003-11-21 08:00 | 2003-11-21 17:00 | 1d | finish no earlier than 2003-11-21 17:00 | 童海涛（项目经理） [1333.6%]; 叶昊 [1620%]; 郑先全 [1145%]; 华良东 [1810%] | 10.4h | 10.4h |
| 78 | 1.3.1.12 | OA软件接口修改 | 3d | 2003-11-19 08:00 A | 2003-11-21 17:00 A |  | 100% | 2003-11-19 08:00 | 2003-11-21 17:00 | 3d | start no earlier than 2003-11-19 08:00 | 童海涛（项目经理） [30%]; 郑先全 | 23.2h | 23.2h |
| 79 | 1.3.1.13 | OA软件接口讨论 | 0.5d | 2003-11-21 08:00 A | 2003-11-21 12:00 A |  | 100% | 2003-11-21 08:00 | 2003-11-21 12:00 | 0.5d | start no earlier than 2003-11-21 08:00 | 童海涛（项目经理）; 郑先全 | 8h | 8h |

| ID | WBS | Task | Duration | Start | Finish | Predecessors | Complete | Remaining | Baseline start | Baseline finish | Baseline duration | Total slack | Free slack | Constraint | Resources | Work | Actual work |
| --- | --- | --- | --- | --- | --- | --- | --- | --- | --- | --- | --- | --- | --- | --- | --- | --- | --- |
| 80 | PD_SD_DD | **详细设计编码及单元测试** | 80d? | 2003-11-21 08:00 A | 2004-02-12 17:00 |  | 71% | 22.93d? | 2003-11-21 08:00 | 2004-01-28 17:00 | 66d? | 64d |  |  | 童海涛（项目经理）; 叶昊; 郑先全; 华良东 | 14399.1h | 8920.82h |
| 81 | PD_SD_DD_01 | **详细设计说明书的编写** | 7.5d? | 2003-11-21 08:00 A | 2003-11-28 12:00 A | 68 | 100% |  | 2003-11-21 08:00 | 2003-11-28 12:00 | 7.5d? |  |  |  | 童海涛（项目经理）; 叶昊; 郑先全; 华良东 | 472h | 472h |
| 82 | 1.3.2.1.1 | **档案管理子系统** | 6d | 2003-11-21 08:00 A | 2003-11-26 17:00 A |  | 100% |  | 2003-11-21 08:00 | 2003-11-26 17:00 | 6d |  |  |  | 叶昊 | 104h | 104h |
| 83 | 1.3.2.1.1.1 | 全宗管理的设计 | 2d | 2003-11-21 08:00 A | 2003-11-22 17:00 A |  | 100% |  | 2003-11-21 08:00 | 2003-11-22 17:00 | 2d |  |  | start no earlier than 2003-11-21 08:00 | 叶昊 | 16h | 16h |
| 84 | 1.3.2.1.1.2 | 档案信息管理设计 | 2d | 2003-11-23 08:00 A | 2003-11-24 17:00 A | 83 | 100% |  | 2003-11-23 08:00 | 2003-11-24 17:00 | 2d |  |  |  | 叶昊 | 16h | 16h |
| 85 | 1.3.2.1.1.3 | 库房管理 | 1d | 2003-11-24 08:00 A | 2003-11-24 17:00 A |  | 100% |  | 2003-11-24 08:00 | 2003-11-24 17:00 | 1d |  |  | start no earlier than 2003-11-24 08:00 | 叶昊 | 8h | 8h |
| 86 | 1.3.2.1.1.4 | 规范化管理 | 1d | 2003-11-25 08:00 A | 2003-11-25 17:00 A | 85 | 100% |  | 2003-11-25 08:00 | 2003-11-25 17:00 | 1d |  |  |  | 叶昊 | 8h | 8h |
| 87 | 1.3.2.1.1.5 | 开放查询管理设计 | 1d | 2003-11-26 08:00 A | 2003-11-26 17:00 A | 86 | 100% |  | 2003-11-26 08:00 | 2003-11-26 17:00 | 1d |  |  |  | 叶昊 | 8h | 8h |
| 88 | 1.3.2.1.2 | **系统维护子系统** | 7.5d? | 2003-11-21 08:00 A | 2003-11-28 12:00 A |  | 100% |  | 2003-11-21 08:00 | 2003-11-28 12:00 | 7.5d? |  |  |  | 华良东 | 128h | 128h |
| 89 | 1.3.2.1.2.1 | 登录管理设计 | 0.5d | 2003-11-21 08:00 A | 2003-11-21 12:00 A |  | 100% |  | 2003-11-21 08:00 | 2003-11-21 12:00 | 0.5d |  |  | start no earlier than 2003-11-21 08:00 | 华良东 | 4h | 4h |
| 90 | 1.3.2.1.2.2 | 日志管理设计 | 1.5d | 2003-11-21 08:00 A | 2003-11-22 12:00 A |  | 100% |  | 2003-11-21 08:00 | 2003-11-22 12:00 | 1.5d |  |  | start no earlier than 2003-11-21 08:00 | 华良东 | 12h | 12h |
| 91 | 1.3.2.1.2.3 | 用户权限管理设计 | 2d? | 2003-11-23 08:00 A | 2003-11-24 17:00 A |  | 100% |  | 2003-11-23 08:00 | 2003-11-24 17:00 | 2d? |  |  | start no earlier than 2003-11-23 08:00 | 华良东 | 16h | 16h |
| 92 | 1.3.2.1.2.4 | 系统设置管理设计 | 1d | 2003-11-24 08:00 A | 2003-11-24 17:00 A |  | 100% |  | 2003-11-24 08:00 | 2003-11-24 17:00 | 1d |  |  | start no earlier than 2003-11-24 08:00 | 华良东 | 8h | 8h |
| 93 | 1.3.2.1.2.5 | 数据库备份与恢复设计 | 1d | 2003-11-25 08:00 A | 2003-11-25 17:00 A | 92 | 100% |  | 2003-11-25 08:00 | 2003-11-25 17:00 | 1d |  |  |  | 华良东 | 8h | 8h |
| 94 | 1.3.2.1.2.6 | 标准化管理设计 | 1d? | 2003-11-26 08:00 A | 2003-11-26 17:00 A | 93 | 100% |  | 2003-11-26 08:00 | 2003-11-26 17:00 | 1d? |  |  |  | 华良东 | 8h | 8h |
| 95 | 1.3.2.1.2.7 | 数据词典管理设计 | 1.5d | 2003-11-27 08:00 A | 2003-11-28 12:00 A | 94 | 100% |  | 2003-11-27 08:00 | 2003-11-28 12:00 | 1.5d |  |  |  | 华良东 | 12h | 12h |
| 96 | 1.3.2.2 | 详细设计说明书汇总 | 0.5d | 2003-11-28 08:00 A | 2003-11-28 12:00 A |  | 100% |  | 2003-11-28 08:00 | 2003-11-28 12:00 | 0.5d |  |  | start no earlier than 2003-11-28 08:00 |  |  |  |
| 97 | PD_SD_DD_02 | 详细设计说明书的评审 | 1d? | 2003-12-02 08:00 A | 2003-12-02 17:00 A | 88 | 100% |  | 2003-12-02 08:00 | 2003-12-02 17:00 | 1d? |  |  |  | 童海涛; 叶昊; 华良东; 马越; 郑先全; 用户代表; SCCB成员（组长：谭石禹） | 56h | 56h |
| 98 | PD_SD_DD_03 | 详细设计说明书的修改 | 1d? | 2003-11-30 08:00 A | 2003-11-30 17:00 A | 97 | 100% |  | 2003-11-30 08:00 | 2003-11-30 17:00 | 1d? |  |  | finish no earlier than 2003-11-30 17:00 | 童海涛（项目经理）; 叶昊; 郑先全; 华良东 | 32h | 32h |
| 99 | PD_SD_DD_04 | 详细设计说明书的完成 | 1d? | 2003-11-30 08:00 A | 2003-11-30 17:00 A | 98SF+3d | 100% |  | 2003-11-30 08:00 | 2003-11-30 17:00 | 1d? |  |  | start no earlier than 2003-11-30 08:00 | 童海涛（项目经理）; 叶昊; 郑先全; 华良东 | 32h | 32h |
| 100 | PD_CD_01 | 审阅设计文档 | 1d? | 2003-12-01 08:00 A | 2003-12-01 17:00 A | 99 | 100% |  | 2003-12-01 08:00 | 2003-12-01 17:00 | 1d? |  |  |  | 童海涛; 叶昊; SCCB成员（组长：谭石禹）; 郑先全 | 32h | 32h |
| 101 | 1.3.2.7 | 编程前准备（主要与网上档案馆项目组沟通） | 4d | 2003-11-26 08:00 A | 2003-11-29 17:00 A |  | 100% |  | 2003-11-26 08:00 | 2003-11-29 17:00 | 4d |  |  | start no earlier than 2003-12-26 08:00 | 童海涛（项目经理）; 叶昊; 郑先全; 华良东 | 128h | 128h |
| 102 | 1.3.2.8 | **编程环境调试与整体设计考虑** | 7.5d? | 2003-12-01 08:00 A | 2003-12-08 12:00 |  | 64% | 2.7d? | 2003-12-01 08:00 | 2003-12-08 12:00 | 7.5d? | 126.5d |  |  | 叶昊; 郑先全; 童海涛（项目经理） | 541h | 318.39h |
| 103 | 1.3.2.8.1 | **硬件环境** | 2d? | 2003-12-01 08:00 A | 2003-12-02 17:00 |  | 56% | 0.88d? | 2003-12-01 08:00 | 2003-12-02 17:00 | 2d? | 128.08d | 0d |  | 童海涛（项目经理）; 叶昊 | 64h | 43h |
| 104 | 1.3.2.8.1.1 | 扫描仪 | 1d? | 2003-12-01 08:00 A | 2003-12-01 17:00 |  | 13% | 0.88d? | 2003-12-01 08:00 | 2003-12-01 17:00 | 1d? | 129.08d |  |  | 童海涛（项目经理） | 8h | 1h |
| 105 | 1.3.2.8.1.2 | 服务器 | 1d | 2003-12-02 08:00 A | 2003-12-02 17:00 A |  | 100% |  | 2003-12-02 08:00 | 2003-12-02 17:00 | 1d |  |  |  | 叶昊; 郑先全; 童海涛（项目经理） | 24h | 24h |

| ID | WBS | Task | Duration | Start | Finish | Predecessors | Complete | Remaining | Baseline start | Baseline finish | Baseline duration | Total slack | Constraint | Resources | Work | Actual work |
| --- | --- | --- | --- | --- | --- | --- | --- | --- | --- | --- | --- | --- | --- | --- | --- | --- |
| 106 | 1.3.2.8.2 | **软件环境** | 7.5d? | 2003-12-01 08:00 A | 2003-12-08 12:00 |  | 67% | 2.49d? | 2003-12-01 08:00 | 2003-12-08 12:00 | 7.5d? | 126.5d |  | 童海涛（项目经理）; 叶昊; 郑先全 | 297h | 160.09h |
| 107 | 1.3.2.8.2.1 | 后台数据库创建 | 2d? | 2003-12-01 08:00 A | 2003-12-02 17:00 A |  | 100% |  | 2003-12-01 08:00 | 2003-12-02 17:00 | 2d? |  | finish no earlier than 2003-12-02 17:00 | 叶昊; 郑先全 | 32h | 32h |
| 108 | 1.3.2.8.2.2 | sunflow安装配置 | 0.5d? | 2003-12-08 08:00 A | 2003-12-08 12:00 A |  | 100% |  | 2003-12-08 08:00 | 2003-12-08 12:00 | 0.5d? |  | start no earlier than 2003-12-03 08:00 | 童海涛（项目经理）; 曹锋 | 4h | 4h |
| 109 | 1.3.2.8.2.3 | tomcat | 0.2d | 2003-12-03 08:00 A | 2003-12-03 09:36 A |  | 100% |  | 2003-12-03 08:00 | 2003-12-03 09:36 | 0.2d |  |  | 叶昊 | 1.6h | 1.6h |
| 110 | 1.3.2.8.2.4 | oracle | 0.2d | 2003-12-03 08:00 A | 2003-12-03 09:36 A |  | 100% |  | 2003-12-03 08:00 | 2003-12-03 09:36 | 0.2d |  |  | 郑先全 | 1.6h | 1.6h |
| 111 | 1.3.2.8.2.5 | Jubuilder | 0.2d | 2003-12-01 08:00 A | 2003-12-01 09:36 A |  | 100% |  | 2003-12-01 08:00 | 2003-12-01 09:36 | 0.2d |  | start no earlier than 2003-12-01 08:00 | 叶昊; 郑先全; 华良东; 胡铮; 王华 | 8h | 8h |
| 112 | 1.3.2.8.2.6 | plsql_dev | 1d? | 2003-12-01 08:00 A | 2003-12-01 17:00 |  | 2% | 0.98d? | 2003-12-01 08:00 | 2003-12-01 17:00 | 1d? | 133d | start no earlier than 2003-12-01 08:00 | 童海涛（项目经理）; 叶昊; 郑先全; 胡铮; 王华; 华良东 | 48h | 1h |
| 113 | 1.3.2.8.2.7 | struts1.1 | 1d? | 2003-12-01 08:00 A | 2003-12-01 17:00 |  | 4% | 0.96d? | 2003-12-01 08:00 | 2003-12-01 17:00 | 1d? | 133d | start no earlier than 2003-12-01 08:00 | 童海涛（项目经理）; 叶昊; 郑先全; 华良东; 胡铮; 王华 | 48h | 2h |
| 114 | 1.3.2.8.2.8 | PowerDesigner | 0.1d | 2003-12-01 08:00 A | 2003-12-01 08:48 A |  | 100% |  | 2003-12-01 08:00 | 2003-12-01 08:48 | 0.1d |  |  | 童海涛（项目经理）; 叶昊; 郑先全; 华良东; 胡铮; 王华 | 4.8h | 4.8h |
| 115 | 1.3.2.8.2.9 | sqlmap | 0.5d | 2003-12-04 08:00 A | 2003-12-04 12:00 A | 114 | 100% |  | 2003-12-04 08:00 | 2003-12-04 12:00 | 0.5d |  |  | 禹进轩; 叶昊; 郑先全; 童海涛 | 16h | 16h |
| 116 | 1.3.2.8.2.10 | FTP服务 | 0.12d | 2003-12-02 08:00 A | 2003-12-02 09:00 A | 115 | 100% |  | 2003-12-02 08:00 | 2003-12-02 09:00 | 0.12d |  |  | 叶昊 | 1h | 1h |
| 117 | PD_CD_02 | 分派任务给开发人员 | 39.17d? | 2003-12-01 08:00 A | 2004-01-09 17:00 | 103 | 90% | 3.92d? | 2003-12-01 08:00 | 2004-01-09 17:00 | 39.17d? | 94d |  | 叶昊; 郑先全; 童海涛（项目经理） | 908h | 832.67h |
| 118 | PD_CD_03 | **编写代码与自测** | 68d? | 2003-12-03 08:00 A | 2004-02-12 17:00 |  | 68% | 21.97d? | 2003-12-02 08:00 | 2004-01-28 17:00 | 55d? | 64d |  | 童海涛（项目经理）; 叶昊; 郑先全; 华良东 | 9414.07h | 5214.31h |
| 119 | 1.3.2.10.1 | **电子文件管理** | 9d | 2003-12-29 08:00 A | 2004-01-06 17:00 |  | 99% | 0d | 2003-12-29 08:00 | 2004-01-02 17:00 | 5d | 0d |  | 郑先全; 王华 | 212.31h | 116.31h |
| 120 | 1.3.2.10.1.1 | 接收 | 4d | 2003-12-29 08:00 A | 2004-01-01 17:00 A |  | 100% |  | 2003-12-29 08:00 | 2003-12-31 17:00 | 3d |  | start no earlier than 2003-12-29 08:00 | 郑先全 | 32h | 32h |
| 121 | 1.3.2.10.1.2 | 整理 | 5d | 2004-01-02 08:00 A | 2004-01-06 17:00 A | 120 | 100% |  | 2004-01-01 08:00 | 2004-01-02 17:00 | 2d |  |  | 郑先全 | 40h | 40h |
| 122 | 1.3.2.10.2 | **档案采集子系统** | 37d? | 2003-12-03 08:00 A | 2004-01-08 17:00 |  | 95% | 1.68d? | 2003-12-03 08:00 | 2003-12-20 17:00 | 18d? | 95d |  | 郑先全 | 604.92h | 370.36h |
| 123 | 1.3.2.10.2.1 | 类目树 | 2d? | 2003-12-03 08:00 A | 2003-12-04 17:00 A |  | 100% |  | 2003-12-03 08:00 | 2003-12-04 17:00 | 2d? |  | finish no earlier than 2003-12-04 17:00 | 郑先全 | 16h | 16h |
| 124 | 1.3.2.10.2.2 | 案卷著录 | 3d | 2003-12-13 08:00 A | 2003-12-15 17:00 A |  | 100% |  | 2003-12-05 08:00 | 2003-12-06 17:00 | 2d |  | finish no earlier than 2003-12-15 17:00 | 郑先全 | 24h | 24h |
| 125 | 1.3.2.10.2.3 | 件著录 | 2d | 2003-12-16 08:00 A | 2003-12-17 17:00 A |  | 100% |  | 2003-12-08 08:00 | 2003-12-09 17:00 | 2d |  | start no earlier than 2003-12-16 08:00 | 郑先全 | 16h | 16h |
| 126 | 1.3.2.10.2.4 | 电子表单 | 3d? | 2003-12-18 08:00 A | 2003-12-20 17:00 A | 125 | 100% |  | 2003-12-10 08:00 | 2003-12-12 17:00 | 3d? |  |  | 郑先全 | 24h | 24h |
| 127 | 1.3.2.10.2.5 | 档案文件结构树 | 1d | 2003-12-22 08:00 A | 2003-12-22 17:00 A | 126 | 100% |  |  |  |  |  | start no earlier than 2003-12-22 08:00 | 郑先全 | 8h | 8h |
| 128 | 1.3.2.10.2.6 | 项目文件结构树 | 1d | 2003-12-23 08:00 A | 2003-12-23 17:00 A | 127 | 100% |  |  |  |  |  | start no earlier than 2003-12-23 08:00 | 郑先全 | 8h | 8h |
| 129 | 1.3.2.10.2.7 | 文件著录 | 2d | 2003-12-24 08:00 A | 2003-12-25 17:00 A | 128 | 100% |  | 2003-12-13 08:00 | 2003-12-14 17:00 | 2d |  |  | 郑先全 | 16h | 16h |

| ID | WBS | Task | Duration | Start | Finish | Predecessors | Complete | Remaining | Baseline start | Baseline finish | Baseline duration | Total slack | Constraint | Deadline | Resources | Work | Actual work |
| --- | --- | --- | --- | --- | --- | --- | --- | --- | --- | --- | --- | --- | --- | --- | --- | --- | --- |
| 130 | 1.3.2.10.2.8 | **档案扫描录入** | 5d | 2003-12-15 08:00 A | 2003-12-19 17:00 A |  | 100% |  | 2003-12-16 08:00 | 2003-12-17 17:00 | 2d |  |  |  | 许晓俊 | 80h | 80h |
| 131 | 1.3.2.10.2.8.1 | 档案扫描录入前台编码 | 3d | 2003-12-15 08:00 A | 2003-12-17 17:00 A |  | 100% |  |  |  |  |  | start no earlier than 2003-12-15 08:00 |  | 许晓俊 | 24h | 24h |
| 132 | 1.3.2.10.2.8.2 | 档案扫描录入控件整合 | 2d | 2003-12-18 08:00 A | 2003-12-19 17:00 A |  | 100% |  |  |  |  |  | start no earlier than 2003-12-18 08:00 |  | 许晓俊 | 16h | 16h |
| 133 | 1.3.2.10.2.9 | **档案检查** | 6d | 2003-12-21 08:00 A | 2003-12-26 17:00 A |  | 100% |  | 2003-12-18 08:00 | 2003-12-19 17:00 | 2d |  |  |  | 许晓俊 | 96h | 96h |
| 134 | 1.3.2.10.2.9.1 | 档案检查前台编码 | 4d | 2003-12-21 08:00 A | 2003-12-24 17:00 A |  | 100% |  |  |  |  |  | finish no earlier than 2003-12-24 17:00 |  | 许晓俊 | 32h | 32h |
| 135 | 1.3.2.10.2.9.2 | 档案检查控件整合 | 2d | 2003-12-25 08:00 A | 2003-12-26 17:00 A |  | 100% |  |  |  |  |  | start no earlier than 2003-12-25 08:00 |  | 许晓俊 | 16h | 16h |
| 136 | 1.3.2.10.2.10 | **档案归档** | 3d | 2003-12-27 08:00 A | 2003-12-29 17:00 A | 134 | 100% |  | 2003-12-20 08:00 | 2003-12-20 17:00 | 1d |  |  |  | 许晓俊 | 40h | 40h |
| 137 | 1.3.2.10.2.10.1 | 归档档案查询 | 1d | 2003-12-27 08:00 A | 2003-12-27 17:00 A |  | 100% |  |  |  |  |  | start no earlier than 2003-12-27 08:00 |  | 许晓俊 | 8h | 8h |
| 138 | 1.3.2.10.2.10.2 | 档案归档后台编码 | 1d | 2003-12-29 08:00 A | 2003-12-29 17:00 A |  | 100% |  |  |  |  |  | start no earlier than 2003-12-29 08:00 |  | 许晓俊 | 8h | 8h |
| 139 | 1.3.2.10.2.11 | 档案著录修改 | 2d | 2004-01-07 08:00 A | 2004-01-08 17:00 |  | 34% | 1.32d |  |  |  | 95d | start no earlier than 2004-01-07 08:00 |  | 郑先全 | 16h | 5.44h |
| 140 | 1.3.2.10.3 | **档案管理子系统** | 63d? | 2003-12-04 08:00 A | 2004-02-06 17:00 |  | 91% | 5.83d? | 2003-12-02 08:00 | 2003-12-31 17:00 | 30d? | 68d |  |  | 叶昊 | 936h | 400h |
| 141 | 1.3.2.10.3.1 | 密级管理 | 2d | 2003-12-04 08:00 A | 2003-12-05 17:00 A |  | 100% |  | 2003-12-04 08:00 | 2003-12-04 17:00 | 1d |  | finish no earlier than 2003-12-04 17:00 |  | 叶昊 | 16h | 16h |
| 142 | 1.3.2.10.3.2 | 类目管理 | 3d | 2003-12-08 08:00 A | 2003-12-10 17:00 A |  | 100% |  | 2003-12-03 08:00 | 2003-12-03 17:00 | 1d |  |  | 2003-12-10 17:00 | 叶昊 | 24h | 24h |
| 143 | 1.3.2.10.3.3 | 温湿度管理 | 1d | 2003-12-11 08:00 A | 2003-12-11 17:00 A | 142 | 100% |  | 2003-12-08 08:00 | 2003-12-08 17:00 | 1d |  | start no earlier than 2003-12-08 08:00 |  | 叶昊 | 8h | 8h |
| 144 | 1.3.2.10.3.4 | 安全管理 | 1d | 2003-12-12 08:00 A | 2003-12-12 17:00 A | 143 | 100% |  | 2003-12-09 08:00 | 2003-12-09 17:00 | 1d |  | finish no earlier than 2003-12-09 17:00 |  | 叶昊 | 8h | 8h |
| 145 | 1.3.2.10.3.5 | 法律法规管理 | 1d | 2003-12-13 08:00 A | 2003-12-13 17:00 A | 144 | 100% |  | 2003-12-11 08:00 | 2003-12-11 17:00 | 1d |  | finish no earlier than 2003-12-11 17:00 |  | 叶昊 | 8h | 8h |
| 146 | 1.3.2.10.3.6 | 密集架管理 | 2d | 2003-12-15 08:00 A | 2003-12-16 17:00 A |  | 100% |  | 2003-12-10 08:00 | 2003-12-10 17:00 | 1d |  | finish no earlier than 2003-12-16 17:00 |  | 叶昊 | 16h | 16h |
| 147 | 1.3.2.10.3.7 | 鉴定管理 | 2d | 2003-12-17 08:00 A | 2003-12-18 17:00 A | 146 | 100% |  | 2003-12-16 08:00 | 2003-12-17 17:00 | 2d |  | finish no earlier than 2003-12-17 17:00 |  | 叶昊 | 16h | 16h |
| 148 | 1.3.2.10.3.8 | 销毁管理 | 2d | 2003-12-19 08:00 A | 2003-12-20 17:00 A | 147 | 100% |  | 2003-12-18 08:00 | 2003-12-19 17:00 | 2d |  | finish no earlier than 2003-12-19 17:00 |  | 叶昊 | 16h | 16h |
| 149 | 1.3.2.10.3.9 | 变更管理 | 2d | 2003-12-22 08:00 A | 2003-12-23 17:00 A | 148 | 100% |  | 2003-12-20 08:00 | 2003-12-21 17:00 | 2d |  | finish no earlier than 2003-12-23 17:00 |  | 叶昊 | 16h | 16h |
| 150 | 1.3.2.10.3.10 | 全宗信息管理 | 3d | 2003-12-24 08:00 A | 2003-12-26 17:00 A | 149 | 100% |  | 2003-12-02 08:00 | 2003-12-02 17:00 | 1d |  | finish no earlier than 2003-12-26 17:00 |  | 叶昊 | 24h | 24h |
| 151 | 1.3.2.10.3.11 | 档案校验 | 3d | 2003-12-27 08:00 A | 2003-12-29 17:00 A | 150 | 100% |  | 2003-12-13 08:00 | 2003-12-15 17:00 | 3d |  | finish no earlier than 2003-12-29 17:00 |  | 叶昊 | 24h | 24h |
| 152 | 1.3.2.10.3.12 | 历史目录册管理 | 8d | 2003-12-15 08:00 A | 2003-12-22 17:00 A |  | 100% |  | 2003-12-15 08:00 | 2003-12-05 17:00 | 1d |  | finish no earlier than 2003-12-22 17:00 |  | 华良东 | 64h | 64h |
| 153 | 1.3.2.10.3.13 | 编研管理 | 11d? | 2003-12-19 08:00 A | 2003-12-29 17:00 A | 152 | 100% |  |  |  |  |  | finish no earlier than 2003-12-29 17:00 |  | 胡铮 | 88h | 88h |
| 154 | 1.3.2.10.3.14 | 年检管理 | 3d | 2004-02-04 08:00 | 2004-02-06 17:00 |  |  |  | 2003-12-23 08:00 | 2003-12-26 17:00 | 4d | 68d | finish no earlier than 2004-02-06 17:00 |  | 叶昊 | 24h |  |
| 155 | 1.3.2.10.3.15 | 监督检查管理 | 8d? | 2003-12-19 08:00 A | 2003-12-26 17:00 A |  | 100% |  | 2003-12-29 08:00 | 2003-12-30 17:00 | 2d? |  | finish no earlier than 2003-12-26 17:00 |  | 华良东 | 64h | 64h |
| 156 | 1.3.2.10.3.16 | 目录册打印 | 2d? | 2004-02-02 08:00 | 2004-02-03 17:00 |  |  |  |  |  |  | 71d | start no earlier than 2004-02-02 08:00 |  | 叶昊 | 16h |  |

Notes:
- 133: 请假三天（12.25--12.27）

| ID | WBS | Task | Duration | Start | Finish | Predecessors | Complete | Remaining | Baseline start | Baseline finish | Baseline duration | Total slack | Free slack | Constraint | Resources | Work | Actual work |
| --- | --- | --- | --- | --- | --- | --- | --- | --- | --- | --- | --- | --- | --- | --- | --- | --- | --- |
| 157 | 1.3.2.10.4 | **档案利用子系统** | 56d? | 2003-12-09 08:00 A | 2004-02-04 17:00 |  | 31% | 38.39d? | 2003-12-09 08:00 | 2004-01-02 17:00 | 25d? | 70d |  |  | 郑先全 | 670.12h | 197.63h |
| 158 | 1.3.2.10.4.1 | 审批流转需求讨论 | 0.5d | 2003-12-09 08:00 A | 2003-12-09 12:00 A |  | 100% |  | 2003-12-09 08:00 | 2003-12-09 12:00 | 0.5d |  |  | start no earlier than 2003-12-09 08:00 | 曹锋; 童海涛; 郑先全 | 12h | 12h |
| 159 | 1.3.2.10.4.2 | sunflow表单设计研究 | 0.5d? | 2003-12-10 08:00 A | 2003-12-10 12:00 A |  | 100% |  | 2003-12-10 08:00 | 2003-12-10 12:00 | 0.5d? |  |  | start no earlier than 2003-12-10 08:00 | 曹锋 | 4h | 4h |
| 160 | 1.3.2.10.4.3 | sunflow流程设计研究 | 0.5d | 2003-12-09 08:00 A | 2003-12-09 12:00 A |  | 100% |  | 2003-12-09 08:00 | 2003-12-09 12:00 | 0.5d |  |  | start no earlier than 2003-12-09 08:00 | 曹锋 | 4h | 4h |
| 161 | 1.3.2.10.4.4 | 了解利用流程的需求 | 0.5d | 2004-01-07 08:00 A | 2004-01-07 12:00 A |  | 100% |  |  |  |  |  |  | start no earlier than 2004-01-07 08:00 | 童海涛（项目经理）; 王华 | 8h | 8h |
| 162 | 1.3.2.10.4.5 | 查阅管理 | 3d | 2004-01-08 08:00 A | 2004-01-10 17:00 |  | 30% | 2.1d | 2003-12-09 08:00 | 2003-12-19 17:00 | 11d | 93d |  | finish no earlier than 2004-01-10 17:00 | 曹锋; 王华 | 40.8h | 7.2h |
| 163 | 1.3.2.10.4.6 | 借阅管理 | 3d | 2004-01-12 08:00 A | 2004-01-14 17:00 |  | 15% | 2.55d | 2003-12-09 08:00 | 2003-12-19 17:00 | 11d | 89d |  | start no earlier than 2004-01-05 08:00 | 曹锋（适当支持）; 王华 | 44.4h | 3.6h |
| 164 | 1.3.2.10.4.7 | 补证管理 | 3d | 2004-01-12 08:00 | 2004-01-14 17:00 |  |  |  | 2003-12-09 08:00 | 2003-12-19 17:00 | 11d | 84d | 0d | finish no earlier than 2004-01-14 17:00 | 曹锋（适当支持）; 王华 | 48h |  |
| 165 | 1.3.2.10.4.8 | 有关sunflow程序的测试与代码修改 | 5d? | 2004-01-15 08:00 | 2004-01-20 17:00 | 164 |  |  | 2003-12-21 08:00 | 2003-12-25 17:00 | 5d? | 84d |  | start no earlier than 2003-12-21 08:00 | 胡铮 | 40h |  |
| 166 | 1.3.2.10.4.9 | 收费项目定义 | 2d | 2004-01-05 08:00 A | 2004-01-06 17:00 A |  | 100% |  | 2003-12-26 08:00 | 2003-12-26 17:00 | 1d |  |  | finish no earlier than 2004-01-06 17:00 | 许晓俊 | 16h | 16h |
| 167 | 1.3.2.10.4.10 | 收费标准定义 | 1d | 2004-01-07 08:00 A | 2004-01-07 17:00 A |  | 100% |  | 2003-12-27 08:00 | 2003-12-28 17:00 | 2d |  |  | start no earlier than 2004-01-07 08:00 | 许晓俊 | 8h | 8h |
| 168 | 1.3.2.10.4.11 | 按文件查询 | 2d | 2004-01-13 08:00 | 2004-01-14 17:00 | 169 |  |  | 2003-12-31 08:00 | 2004-01-02 17:00 | 3d | 89d |  | finish no earlier than 2004-01-14 17:00 | 叶昊 | 16h |  |
| 169 | 1.3.2.10.4.12 | 档案综合查询（按案卷/件） | 4d? | 2004-01-02 08:00 A | 2004-01-05 17:00 |  | 85% | 0.6d? | 2003-12-27 08:00 | 2003-12-29 17:00 | 3d? | 96d | 7d | finish no earlier than 2004-01-05 17:00 | 叶昊 | 32h | 27.2h |
| 170 | 1.3.2.10.4.13 | 统计报表 | 3d | 2004-01-30 08:00 | 2004-02-02 17:00 | 166 |  |  | 2003-12-30 08:00 | 2004-01-01 17:00 | 3d | 72d |  | finish no earlier than 2004-02-02 17:00 | 叶昊 | 24h |  |
| 171 | 1.3.2.10.4.14 | 发布栏目定义 | 1d? | 2004-02-02 08:00 | 2004-02-02 17:00 |  |  |  | 2003-12-29 08:00 | 2003-12-29 17:00 | 1d? | 70d | 0d | start no earlier than 2004-02-02 08:00 | 郑先全 | 8h |  |
| 172 | 1.3.2.10.4.15 | 信息发布 | 1d? | 2004-02-03 08:00 | 2004-02-03 17:00 | 171 |  |  | 2003-12-30 08:00 | 2003-12-30 17:00 | 1d? | 70d | 0d | start no earlier than 2004-02-02 08:00 | 郑先全 | 8h |  |
| 173 | 1.3.2.10.4.16 | 取消发布 | 1d? | 2004-02-04 08:00 | 2004-02-04 17:00 | 172 |  |  | 2003-12-31 08:00 | 2003-12-31 17:00 | 1d? | 70d |  | start no earlier than 2003-12-27 08:00 | 郑先全 | 8h |  |
| 174 | 1.3.2.10.5 | **系统维护子系统** | 56d | 2003-12-08 08:00 A | 2004-02-03 17:00 |  | 61% | 21.59d | 2003-12-08 08:00 | 2003-12-27 17:00 | 20d? | 71d |  |  | 叶昊; 华良东 | 1342.72h | 377.92h |
| 175 | 1.3.2.10.5.1 | 编程环境的调试和整体设计 | 1d | 2003-12-08 08:00 A | 2003-12-08 17:00 A |  | 100% |  | 2003-12-08 08:00 | 2003-12-08 17:00 | 1d |  |  | start no earlier than 2003-12-08 08:00 | 叶昊; 华良东 | 16h | 16h |
| 176 | 1.3.2.10.5.2 | **数据字典管理** | 18.5d | 2003-12-08 08:00 A | 2003-12-26 12:00 A |  | 100% |  | 2003-12-09 08:00 | 2003-12-10 17:00 | 2d |  |  |  | 华良东 | 272h | 272h |
| 177 | 1.3.2.10.5.2.1 | 主题词管理 | 4d | 2003-12-08 08:00 A | 2003-12-11 17:00 A |  | 100% |  |  |  |  |  |  | start no earlier than 2003-12-08 08:00 | 华良东; 禹敬轩 | 64h | 64h |
| 178 | 1.3.2.10.5.2.2 | 系统参数管理 | 3d | 2003-12-12 08:00 A | 2003-12-14 17:00 A |  | 100% |  |  |  |  |  |  | start no earlier than 2003-12-12 08:00 | 华良东; 禹敬轩 | 48h | 48h |
| 179 | 1.3.2.10.5.2.3 | 系统参数接口 | 1.5d | 2003-12-25 08:00 A | 2003-12-26 12:00 A |  | 100% |  |  |  |  |  |  | start no earlier than 2003-12-25 08:00 | 禹敬轩 | 12h | 12h |
| 180 | 1.3.2.10.5.3 | 用户管理 | 3d | 2003-12-29 08:00 A | 2003-12-31 17:00 A |  | 100% |  | 2003-12-16 08:00 | 2003-12-18 17:00 | 3d |  |  | start no earlier than 2003-12-29 08:00 | 禹敬轩 | 24h | 24h |
| 181 | 1.3.2.10.5.4 | 用户组管理 | 1d | 2004-01-02 08:00 A | 2004-01-02 17:00 A |  | 100% |  | 2003-12-19 08:00 | 2003-12-20 17:00 | 2d |  |  | finish no earlier than 2004-01-02 17:00 | 禹敬轩 | 8h | 8h |
| 182 | 1.3.2.10.5.5 | 组织结构 | 2d | 2004-01-13 08:00 | 2004-01-14 17:00 |  |  |  | 2003-12-21 08:00 | 2003-12-22 17:00 | 2d? | 88.2d | 0d | finish no earlier than 2004-01-14 17:00 | 禹敬轩 | 16h |  |
| 183 | 1.3.2.10.5.6 | 系统运行日志管理 | 2d | 2004-01-09 08:00 A | 2004-01-15 15:24 | 177, 182 | 60% | 0.8d | 2003-12-12 08:00 | 2003-12-13 17:00 | 2d | 88.2d |  | start no earlier than 2004-01-09 08:00 | 禹敬轩 | 16h | 9.6h |
| 184 | 1.3.2.10.5.7 | 用户操作日志管理 | 2d | 2004-01-09 08:00 A | 2004-01-10 17:00 | 183 | 60% | 0.8d | 2003-12-14 08:00 | 2003-12-15 17:00 | 2d | 93d |  | start no earlier than 2004-01-09 08:00 | 禹敬轩 | 16h | 9.6h |
| 185 | 1.3.2.10.5.8 | 用户登录管理 | 1d | 2004-01-07 08:00 A | 2004-01-07 17:00 A | 184 | 100% |  | 2003-12-11 08:00 | 2003-12-11 17:00 | 1d |  |  | finish no earlier than 2004-01-07 17:00 | 禹敬轩 | 8h | 8h |
| 186 | 1.3.2.10.5.9 | 数据库备份 | 1d | 2004-01-29 08:00 | 2004-01-29 17:00 | 185 |  |  | 2003-12-23 08:00 | 2003-12-24 17:00 | 2d? | 74d | 0d | finish no earlier than 2004-01-29 17:00 | 禹敬轩 | 8h |  |
| 187 | 1.3.2.10.5.10 | 数据库恢复 | 1d | 2004-01-30 08:00 | 2004-01-30 17:00 | 186 |  |  | 2003-12-25 08:00 | 2003-12-26 17:00 | 2d? | 74d |  | finish no earlier than 2004-01-30 17:00 | 禹敬轩 | 8h |  |
| 188 | 1.3.2.10.5.11 | 表单自定义 | 3d | 2004-01-29 08:00 | 2004-01-31 17:00 |  |  |  |  |  |  | 71d | 0d | start no earlier than 2004-01-29 08:00 | 郑先全 | 24h |  |
| 189 | 1.3.2.10.5.12 | 主界面个性化定义 | 2d | 2004-02-02 08:00 | 2004-02-03 17:00 | 188 |  |  |  |  |  | 71d |  |  | 郑先全; 叶昊 | 32h |  |

| ID | WBS | Task | Duration | Start | Finish | Predecessors | Complete | Remaining | Baseline start | Baseline finish | Baseline duration | Total slack | Free slack | Constraint | Resources | Work | Actual work |
| --- | --- | --- | --- | --- | --- | --- | --- | --- | --- | --- | --- | --- | --- | --- | --- | --- | --- |
| 190 | 1.3.2.10.6 | **后阶段任务** | 11d? | 2004-01-30 08:00 | 2004-02-12 17:00 |  |  |  |  |  |  | 64d |  |  |  | 200h |  |
| 191 | 1.3.2.10.6.1 | 年检管理 | 2.5d | 2004-01-31 08:00 | 2004-02-03 12:00 |  |  |  |  |  |  | 71.5d |  | start no earlier than 2004-01-31 08:00 | 郑先全 | 20h |  |
| 192 | 1.3.2.10.6.2 | 打印功能 | 2d? | 2004-01-31 08:00 | 2004-02-02 17:00 |  |  |  |  |  |  | 69d | 0d | start no earlier than 2004-01-31 08:00 | 叶昊 | 16h |  |
| 193 | 1.3.2.10.6.3 | 借阅管理 | 3d | 2004-01-31 08:00 | 2004-02-03 17:00 |  |  |  |  |  |  | 71d |  | start no earlier than 2004-01-31 08:00 | 王华 | 24h |  |
| 194 | 1.3.2.10.6.4 | 补证管理 | 3d | 2004-02-03 08:00 | 2004-02-05 17:00 | 192 |  |  |  |  |  | 69d |  |  | 王华 | 24h |  |
| 195 | 1.3.2.10.6.5 | 发布栏定义 | 0.5d | 2004-02-03 08:00 | 2004-02-03 12:00 |  |  |  |  |  |  | 71.5d |  | start no earlier than 2004-02-03 08:00 | 郑先全 | 4h |  |
| 196 | 1.3.2.10.6.6 | 信息发布 | 1d? | 2004-02-04 08:00 | 2004-02-04 17:00 |  |  |  |  |  |  | 70d |  | start no earlier than 2004-02-04 08:00 | 郑先全 | 8h |  |
| 197 | 1.3.2.10.6.7 | 取消发布 | 1d | 2004-02-05 08:00 | 2004-02-05 17:00 |  |  |  |  |  |  | 69d |  | start no earlier than 2004-02-05 08:00 | 郑先全 | 8h |  |
| 198 | 1.3.2.10.6.8 | 查询结构树 | 3d | 2004-02-03 08:00 | 2004-02-05 17:00 |  |  |  |  |  |  | 69d |  | start no earlier than 2004-02-03 08:00 | 叶昊 | 24h |  |
| 199 | 1.3.2.10.6.9 | 数据库备份 | 2d? | 2004-01-30 08:00 | 2004-02-01 17:00 |  |  |  |  |  |  | 73d |  | finish no earlier than 2004-02-01 17:00 | 禹敬轩 | 16h |  |
| 200 | 1.3.2.10.6.10 | 数据库恢复 | 2d? | 2004-02-02 08:00 | 2004-02-03 17:00 |  |  |  |  |  |  | 71d |  | start no earlier than 2004-02-02 08:00 | 禹敬轩 | 16h |  |
| 201 | 1.3.2.10.6.11 | 表单自定义 | 2d? | 2004-02-06 08:00 | 2004-02-09 17:00 |  |  |  |  |  |  | 67d |  | start no earlier than 2004-02-06 08:00 | 郑先全 | 16h |  |
| 202 | 1.3.2.10.6.12 | 主界面个性化定义 | 3d? | 2004-02-10 08:00 | 2004-02-12 17:00 |  |  |  |  |  |  | 64d |  | start no earlier than 2004-02-10 08:00 | 郑先全 | 24h |  |
| 203 | PD_CD_04 | **测试与修改代码** | 11d? | 2004-01-03 08:00 A | 2004-01-13 17:00 |  | 47% | 5.85d? | 2004-01-03 08:00 | 2004-01-06 17:00 | 4d? | 90d |  |  | 叶昊; 郑先全; 华良东 | 1360h | 636.51h |
| 204 | 1.3.2.10.7.1 | 电子文件管理 | 10d? | 2004-01-03 08:00 A | 2004-01-13 17:00 |  | 47% | 5.32d? | 2004-01-03 08:00 | 2004-01-06 17:00 | 4d? | 90d |  | finish no earlier than 2004-01-13 17:00 | 郑先全; 胡诤; 华良东 | 240h | 112.33h |
| 205 | 1.3.2.10.7.2 | 档案采集子系统 | 10d? | 2004-01-03 08:00 A | 2004-01-13 17:00 |  | 47% | 5.32d? | 2004-01-03 08:00 | 2004-01-06 17:00 | 4d? | 90d |  | finish no earlier than 2004-01-13 17:00 | 郑先全; 胡诤; 华良东; 许晓俊 | 320h | 149.77h |
| 206 | 1.3.2.10.7.3 | 档案管理子系统 | 10d? | 2004-01-03 08:00 A | 2004-01-13 17:00 |  | 47% | 5.32d? | 2004-01-03 08:00 | 2004-01-06 17:00 | 4d? | 90d |  | finish no earlier than 2004-01-13 17:00 | 叶昊; 胡诤; 华良东 | 240h | 112.33h |
| 207 | 1.3.2.10.7.4 | 档案利用子系统 | 10d? | 2004-01-03 08:00 A | 2004-01-13 17:00 |  | 47% | 5.32d? | 2004-01-03 08:00 | 2004-01-06 17:00 | 4d? | 90d |  | finish no earlier than 2004-01-13 17:00 | 叶昊; 胡诤; 华良东; 曹锋 | 320h | 149.77h |
| 208 | 1.3.2.10.7.5 | 系统维护子系统 | 10d? | 2004-01-03 08:00 A | 2004-01-13 17:00 |  | 47% | 5.32d? | 2004-01-03 08:00 | 2004-01-06 17:00 | 4d? | 90d |  | finish no earlier than 2004-01-13 17:00 | 禹敬轩; 华良东; 胡诤 | 240h | 112.33h |
| 209 | 1.3.2.10.8 | 后台数据库编写 | 27d | 2003-12-05 08:00 A | 2003-12-31 17:00 A |  | 100% |  | 2003-12-05 08:00 | 2003-12-31 17:00 | 27d |  |  | start no earlier than 2003-12-05 08:00 | 许晓俊; 叶昊; 郑先全; 禹敬轩 | 864h | 864h |
| 210 | 1.3.2.10.9 | 模块调用程序编写 | 31d | 2003-12-05 08:00 A | 2004-01-04 17:00 A |  | 100% |  | 2004-01-05 08:00 | 2004-01-28 17:00 | 21d |  |  | start no earlier than 2003-12-05 08:00 | 叶昊; 郑先全 | 496h | 496h |
| 211 | 1.3.2.10.10 | **试运行前准备工作安排（最后8天的倒计时安排）** | 8d? | 2004-01-07 08:00 A | 2004-01-14 17:00 |  | 51% | 3.93d? |  |  |  | 89d |  |  |  | 552h | 282.76h |
| 212 | 1.3.2.10.10.1 | 各人员将目前的任务按进度尽快完成 | 4d? | 2004-01-07 08:00 A | 2004-01-10 17:00 |  | 90% | 0.4d? |  |  |  | 93d |  | start no earlier than 2004-01-07 08:00 | 童海涛（项目经理）; 叶昊; 郑先全; 华良东; 许晓俊; 禹敬轩; 曹锋; 胡诤 | 256h | 230.4h |
| 213 | 1.3.2.10.10.2 | 联系美编人员与美化界面 | 2d | 2004-01-08 08:00 A | 2004-01-09 17:00 A |  | 100% |  |  |  |  |  |  | start no earlier than 2004-01-08 08:00 | 童海涛（项目经理）; 孙勇 | 32h | 32h |
| 214 | 1.3.2.10.10.3 | 测试数据到位 | 2d? | 2004-01-10 08:00 | 2004-01-11 17:00 |  |  |  |  |  |  | 92d |  | finish no earlier than 2004-01-11 17:00 | 郑先全; 童海涛（项目经理） | 32h |  |
| 215 | 1.3.2.10.10.4 | 系统整合与封装 | 1d | 2004-01-12 08:00 | 2004-01-12 17:00 |  |  |  |  |  |  | 91d |  | start no earlier than 2004-01-12 08:00 | 童海涛（项目经理）; 叶昊; 郑先全; 华良东; 许晓俊; 禹敬轩; 曹锋; 胡诤 | 64h |  |
| 216 | 1.3.2.10.10.5 | 试运行前检查 | 2d? | 2004-01-13 08:00 | 2004-01-14 17:00 |  |  |  | 2004-01-07 08:00 | 2004-01-07 17:00 | 1d? | 89d |  | start no earlier than 2004-01-13 08:00 | 童海涛（项目经理）; 叶昊; 郑先全; 华良东; 许晓俊; 禹敬轩; 曹锋; 胡诤 | 128h |  |
| 217 | PD_CD_06 | 初次试运行 | 1d? | 2004-01-15 08:00 | 2004-01-15 17:00 |  |  |  | 2004-01-08 08:00 | 2004-01-14 17:00 | 5d? | 85d | 0d | start no earlier than 2004-01-15 08:00 | 叶昊; 童海涛（项目经理）; 郑先全; 华良东; 曹锋; 许晓俊; 禹敬轩; 胡诤 | 64h |  |
| 218 | PD_CD_07 | 试运行及修改代码 | 3d? | 2004-01-16 08:00 | 2004-01-19 17:00 | 217 |  |  | 2004-01-15 08:00 | 2004-01-15 17:00 | 1d? | 85d |  | finish no earlier than 2004-01-18 17:00 | 童海涛（项目经理）; 叶昊; 郑先全; 华良东; 曹锋; 禹敬轩; 许晓俊; 胡诤 | 192h |  |

Notes:
- 209: 此任务作废
- 210: 此任务作废

| ID | WBS | Task | Type | Duration | Start | Finish | Predecessors | Baseline start | Baseline finish | Baseline duration | Total slack | Free slack | Constraint | Resources | Work |
| --- | --- | --- | --- | --- | --- | --- | --- | --- | --- | --- | --- | --- | --- | --- | --- |
| 219 | PD_ST | **软件测试** |  | 23d | 2003-12-25 08:00 | 2004-01-16 17:00 |  | 2003-12-25 08:00 | 2004-01-19 17:00 | 23d | 87d |  |  |  | 184h |
| 220 | PD_ST_01 | 系统测试用例的编写 |  | 6d | 2003-12-25 08:00 | 2003-12-30 17:00 |  | 2003-12-25 08:00 | 2003-12-30 17:00 | 6d | 103d | 0d | start no earlier than 2003-12-25 08:00 |  | 48h |
| 221 | PD_ST_02 | 系统测试用例的评审 |  | 0.5d | 2003-12-31 08:00 | 2003-12-31 12:00 | 220 | 2003-12-31 08:00 | 2003-12-31 12:00 | 0.5d | 103d | 0d |  | 童海涛; 马越 | 12h |
| 222 | PD_ST_03 | 系统测试用例的修改 |  | 0.5d | 2003-12-31 13:00 | 2003-12-31 17:00 | 221 | 2003-12-31 13:00 | 2003-12-31 17:00 | 0.5d | 103d |  |  |  | 4h |
| 223 | PD_ST_04 | 集成测试用例的编写 |  | 4d | 2004-01-03 08:00 | 2004-01-06 17:00 | 68, 99FF+3d | 2004-01-03 08:00 | 2004-01-06 17:00 | 4d | 97d |  | start no earlier than 2004-01-03 08:00 |  | 32h |
| 224 | PD_ST_05 | 集成测试用例的评审 |  | 0.5d | 2004-01-06 08:00 | 2004-01-06 12:00 |  | 2004-01-06 08:00 | 2004-01-06 12:00 | 0.5d | 87d | 0d | start no earlier than 2004-01-06 08:00 |  | 4h |
| 225 | PD_ST_06 | 集成测试用例的修改 |  | 0.5d | 2004-01-06 13:00 | 2004-01-06 17:00 | 224 | 2004-01-06 13:00 | 2004-01-06 17:00 | 0.5d | 87d | 0d |  |  | 4h |
| 226 | PD_ST_07 | 集成测试实施 |  | 6d | 2004-01-07 08:00 | 2004-01-12 17:00 | 225 | 2004-01-07 08:00 | 2004-01-14 17:00 | 6d | 87d | 0d |  |  | 48h |
| 227 | PD_ST_08 | 系统测试实施 |  | 4d | 2004-01-13 08:00 | 2004-01-16 17:00 | 226 | 2004-01-15 08:00 | 2004-01-19 17:00 | 4d | 87d | 0d |  |  | 32h |
| 228 | PD_ST_09 | 整体测试完成 | milestone | 0d | 2004-01-16 17:00 | 2004-01-16 17:00 | 227 | 2004-01-19 17:00 | 2004-01-19 17:00 | 0d | 87d |  |  |  |  |
| 229 | 1.5 | 试运行初步验收 |  | 2d | 2004-01-20 08:00 | 2004-01-21 17:00 |  | 2004-01-20 08:00 | 2004-01-21 17:00 | 2d | 83d |  | start no earlier than 2004-01-20 08:00 | 童海涛; 用户代表 | 32h |
| 230 | PD_TR | **系统试运行** |  | 87d | 2004-01-18 08:00 | 2004-05-12 17:00 |  | 2003-12-01 08:00 | 2004-05-12 17:00 | 131d | 0d |  |  |  | 1528h |
| 231 | PD_TR_01 | 确定测试群体 |  | 1d | 2004-01-18 08:00 | 2004-01-18 17:00 |  | 2004-01-18 08:00 | 2004-01-18 17:00 | 1d | 6d | 0d | start no earlier than 2004-01-18 08:00 | 童海涛 | 8h |
| 232 | PD_TR_02 | 确定软件分发机制 |  | 1d | 2004-01-19 08:00 | 2004-01-19 17:00 | 231 | 2004-01-19 08:00 | 2004-01-19 17:00 | 1d | 6d | 0d | start no earlier than 2004-01-19 08:00 | 童海涛 | 8h |
| 233 | PD_TR_03 | 安装/部署软件 |  | 1d | 2004-01-20 08:00 | 2004-01-20 17:00 | 232 | 2004-01-20 08:00 | 2004-01-20 17:00 | 1d | 6d | 0d | start no earlier than 2004-01-20 08:00 |  | 8h |
| 234 | PD_TR_04 | 获得用户反馈 |  | 5d | 2004-01-21 08:00 | 2004-01-25 17:00 | 233 | 2004-01-21 08:00 | 2004-01-25 17:00 | 5d | 6d | 0d | finish no earlier than 2004-01-22 17:00 |  | 40h |
| 235 | PD_TR_05 | 评估测试信息 |  | 1d | 2004-01-26 08:00 | 2004-01-26 17:00 | 234 | 2004-01-26 08:00 | 2004-01-26 17:00 | 1d | 6d | 3d |  |  | 8h |
| 236 | PD_TR_06 | 系统试运行阶段 |  | 72d | 2004-01-30 08:00 | 2004-05-07 17:00 | 235 | 2004-01-29 08:00 | 2004-05-07 17:00 | 72d | 3d |  | finish no earlier than 2004-05-07 17:00 |  | 576h |
| 237 | PD_UD | **用户手册** |  | 9d | 2004-01-30 08:00 | 2004-02-10 17:00 |  | 2003-12-01 08:00 | 2003-12-18 09:36 | 17.2d | 66d |  |  |  | 88h |
| 238 | PD_UD_01 | 制定用户手册编写规范 |  | 1d | 2004-01-30 08:00 | 2004-01-30 17:00 | 99 | 2004-01-30 08:00 | 2003-12-01 17:00 | 1d | 67d | 1d | start no earlier than 2004-01-30 08:00 |  | 8h |
| 239 | PD_UD_02 | 编写用户手册 |  | 4d | 2004-02-02 08:00 | 2004-02-05 17:00 | 238 | 2004-02-02 08:00 | 2003-12-16 17:00 | 15d | 66d | 0d | finish no earlier than 2004-02-05 17:00 |  | 32h |
| 240 | PD_UD_03 | 审阅所有的用户文档 |  | 1d | 2004-02-06 08:00 | 2004-02-06 17:00 | 239 | 2004-02-06 08:00 | 2003-12-17 17:00 | 1d | 66d | 0d |  |  | 8h |
| 241 | PD_UD_04 | 根据反馈修改用户文档 |  | 1d | 2004-02-09 08:00 | 2004-02-09 17:00 | 240 | 2004-02-09 08:00 | 2003-12-18 09:36 | 0.2d | 66d | 0d |  | 童海涛; 叶昊 | 40h |
| 242 | PD_UD_05 | 文档完成 |  | 1d | 2004-02-10 08:00 | 2004-02-10 17:00 | 241 | 2004-02-10 08:00 | 2003-12-18 09:36 | 0d | 66d |  |  |  |  |

| ID | WBS | Task | Type | Duration | Start | Finish | Predecessors | Complete | Remaining | Baseline start | Baseline finish | Baseline duration | Total slack | Free slack | Constraint | Resources | Work | Actual work |
| --- | --- | --- | --- | --- | --- | --- | --- | --- | --- | --- | --- | --- | --- | --- | --- | --- | --- | --- |
| 243 | PD_CA | **系统验收** |  | 5d | 2004-05-06 08:00 | 2004-05-12 17:00 |  |  |  | 2004-05-06 08:00 | 2004-05-12 17:00 | 5d | 0d |  |  |  | 96h |  |
| 244 | PD_CA_01 | 项目总结报告的编写 |  | 2d | 2004-05-06 08:00 | 2004-05-07 17:00 |  |  |  | 2004-05-06 08:00 | 2004-05-07 17:00 | 2d | 0d |  | start no earlier than 2004-05-06 08:00 | 童海涛 | 16h |  |
| 245 | PD_CA_02 | 项目总结报告评审 |  | 1d | 2004-05-10 08:00 | 2004-05-10 17:00 | 244 |  |  | 2004-05-10 08:00 | 2004-05-10 17:00 | 1d | 0d |  |  | SCCB成员; 童海涛; 叶昊; 马越; 用户代表 | 56h |  |
| 246 | 1.6.8.3 | 用户级评审 |  | 1d | 2004-05-11 08:00 | 2004-05-11 17:00 | 245 |  |  | 2004-05-11 08:00 | 2004-05-11 17:00 | 1d | 0d |  | finish no earlier than 2004-05-10 17:00 | 童海涛; 用户代表 | 16h |  |
| 247 | PD_CA_03 | 项目总结报告的修改 |  | 0.5d | 2004-05-12 08:00 | 2004-05-12 12:00 | 246 |  |  | 2004-05-12 08:00 | 2004-05-12 12:00 | 0.5d | 0d |  |  | 童海涛 | 4h |  |
| 248 | PD_CA_04 | 产品发布申请表的填写 |  | 0.5d | 2004-05-12 13:00 | 2004-05-12 17:00 | 247 |  |  | 2004-05-12 13:00 | 2004-05-12 17:00 | 0.5d | 0d |  |  | 童海涛 | 4h |  |
| 249 | PD_CA_05 | 发布通知书的签署 | milestone | 0d | 2004-05-12 17:00 | 2004-05-12 17:00 | 248 |  |  | 2004-05-12 17:00 | 2004-05-12 17:00 | 0d | 0d |  |  |  |  |  |
| 250 | PM | **项目管理过程** |  | 175.2d | 2003-10-17 08:00 A | 2004-05-10 09:36 |  | 58% | 74.15d | 2003-10-17 08:00 | 2004-05-10 09:36 | 172.2d | 2.8d |  |  |  | 267.28h | 61.68h |
| 251 | PM_PIM | **项目立项** |  | 3d | 2003-10-17 08:00 | 2003-10-19 17:00 |  |  |  | 2003-10-20 08:00 | 2003-10-19 17:00 | 3d | 175d |  |  |  | 28h |  |
| 252 | PM_PIM_01 | 立项报告的编写 |  | 2d | 2003-10-17 08:00 | 2003-10-18 17:00 |  |  |  | 2003-10-20 08:00 | 2003-10-18 17:00 | 2d | 175d | 0d |  | 童海涛 | 16h |  |
| 253 | PM_PIM_02 | 立项报告的评审 |  | 0.5d | 2003-10-19 08:00 | 2003-10-19 12:00 | 252 |  |  | 2003-10-20 08:00 | 2003-10-19 12:00 | 0.5d | 175d | 0d |  | SCCB成员; 童海涛 | 8h |  |
| 254 | PM_PIM_03 | 立项报告的修改 |  | 0.5d | 2003-10-19 13:00 | 2003-10-19 17:00 | 253 |  |  | 2003-10-20 08:00 | 2003-10-19 17:00 | 0.5d | 175d | 0d |  | 童海涛 | 4h |  |
| 255 | PM_PIM_04 | 立项通知单的发布 | milestone | 0d | 2003-10-19 17:00 | 2003-10-19 17:00 | 254 |  |  | 2003-10-19 17:00 | 2003-10-19 17:00 | 0d | 175d | 0d |  | SCCB成员 |  |  |
| 256 | PM_RM | **需求管理** |  | 14d | 2003-10-31 13:00 | 2003-11-15 12:00 |  |  |  | 2003-10-31 13:00 | 2003-11-15 12:00 | 14d | 149.5d |  |  |  | 16h |  |
| 257 | PM_RM_01 | 需求跟踪矩阵表的填写 |  | 1d | 2003-10-31 13:00 | 2003-11-01 12:00 | 36 |  |  | 2003-10-31 13:00 | 2003-11-01 12:00 | 1d | 162.5d |  |  | 童海涛 | 8h |  |
| 258 | PM_RM_02 | 需求变更管理 |  | 1d | 2003-11-14 13:00 | 2003-11-15 12:00 | 68 |  |  | 2003-11-14 13:00 | 2003-11-15 12:00 | 1d | 149.5d |  |  | 童海涛 | 8h |  |
| 259 | PM_PP | **项目计划** |  | 18.2d | 2003-11-04 08:00 A | 2003-11-22 09:36 A |  | 100% |  | 2003-11-04 08:00 | 2003-11-22 09:36 | 18.2d |  |  |  |  | 31.2h | 31.2h |
| 260 | PM_PP_01 | 项目开发计划书的编写 |  | 2d | 2003-11-04 08:00 A | 2003-11-05 17:00 A |  | 100% |  | 2003-11-04 08:00 | 2003-11-05 17:00 | 2d |  |  | finish no earlier than 2003-11-05 17:00 | 童海涛 | 16h | 16h |
| 261 | PM_PP_02 | 项目开发计划书的评审 |  | 2d | 2003-11-06 08:00 A | 2003-11-21 17:00 A | 260 | 100% |  | 2003-11-06 08:00 | 2003-11-21 17:00 | 2d |  |  | finish no earlier than 2003-11-21 17:00 | SCCB成员（组长：谭石禹）; 马越 | 8h | 8h |
| 262 | PM_PP_03 | 项目开发计划书的修改 |  | 15d | 2003-11-07 08:00 A | 2003-11-21 17:00 A |  | 100% |  | 2003-11-07 08:00 | 2003-11-21 17:00 | 15d |  |  | finish no earlier than 2003-11-21 17:00 | 童海涛 [3.3%] | 4h | 4h |
| 263 | PM_PP_04 | 项目开发计划书的完成 |  | 0.2d | 2003-11-21 17:00 A | 2003-11-22 09:36 A | 262 | 100% |  | 2003-11-21 17:00 | 2003-11-22 09:36 | 0.2d |  |  |  | 童海涛; 马越 | 3.2h | 3.2h |
| 264 | PM_PTO | **计划跟踪** |  | 165.2d | 2003-10-27 08:00 A | 2004-05-10 09:36 |  | 11% | 146.93d | 2003-10-27 08:00 | 2004-05-10 09:36 | 162.2d | 2.8d |  |  |  | 176.08h | 30.48h |
| 265 | PM_PTO_RM | **例会的召开** |  | 9.2d | 2003-10-27 08:00 A | 2003-11-06 09:36 |  | 83% | 1.57d | 2003-10-27 08:00 | 2003-11-06 09:36 | 9.2d | 158.8d |  |  |  | 36.88h | 30.48h |
| 266 | PM_PTO_RM_01 | 例会的召开 1 |  | 0.25d | 2003-10-27 08:00 A | 2003-10-27 10:00 A |  | 100% |  | 2003-10-27 08:00 | 2003-10-27 10:00 | 0.25d |  |  | start no earlier than 2003-10-27 08:00 | 童海涛; 叶昊; 郑先全; 华良东 | 8h | 8h |
| 267 | PM_PTO_RM_02 | 例会的召开 2 |  | 0.07d | 2003-10-29 08:00 A | 2003-10-29 08:33 A |  | 100% |  | 2003-10-29 08:00 | 2003-10-29 08:33 | 0.07d |  |  | start no earlier than 2003-10-29 08:00 | 叶昊; 郑先全; 华良东 | 1.68h | 1.68h |
| 268 | PM_PTO_RM_03 | 例会的召开 3 |  | 0.5d | 2003-11-04 08:00 A | 2003-11-04 12:00 A |  | 100% |  | 2003-11-04 08:00 | 2003-11-04 12:00 | 0.5d |  |  | start no earlier than 2003-11-04 08:00 | 童海涛; 叶昊; 郑先全; 华良东 | 16h | 16h |
| 269 | PM_PTO_RM_04 | 例会的召开 4 |  | 0.15d | 2003-11-05 08:00 A | 2003-11-05 09:12 A |  | 100% |  | 2003-11-05 08:00 | 2003-11-05 09:12 | 0.15d |  |  | start no earlier than 2003-11-05 08:00 | 童海涛; 郑先全; 叶昊; 华良东 | 4.8h | 4.8h |
| 270 | PM_PTO_RM-05 | 例会的召开 5 |  | 0.2d | 2003-11-06 08:00 | 2003-11-06 09:36 |  |  |  | 2003-11-06 08:00 | 2003-11-06 09:36 | 0.2d | 158.8d |  | start no earlier than 2003-11-06 08:00 | 童海涛; 叶昊; 郑先全; 华良东 | 6.4h |  |

| ID | WBS | Task | Duration | Start | Finish | Baseline start | Baseline finish | Baseline duration | Total slack | Constraint | Resources | Work |
| --- | --- | --- | --- | --- | --- | --- | --- | --- | --- | --- | --- | --- |
| 271 | PM_PTO_WR | **工作情况汇报表的填写** | 98.2d | 2004-01-02 08:00 | 2004-05-07 09:36 | 2004-01-02 08:00 | 2004-05-07 09:36 | 95.2d | 3.8d |  |  | 108.8h |
| 272 | PM_PTO_WR_01 | 工作情况汇报表的填写 1 | 0.2d | 2004-01-02 08:00 | 2004-01-02 09:36 | 2004-01-02 08:00 | 2004-01-02 09:36 | 0.2d | 101.8d | start no earlier than 2004-01-02 08:00 | 童海涛; 叶昊 | 3.2h |
| 273 | PM_PTO_WR_02 | 工作情况汇报表的填写 2 | 0.2d | 2004-01-09 08:00 | 2004-01-09 09:36 | 2004-01-09 08:00 | 2004-01-09 09:36 | 0.2d | 94.8d | start no earlier than 2004-01-09 08:00 | 童海涛; 叶昊 | 3.2h |
| 274 | PM_PTO_WR-03 | 工作情况汇报表的填写 3 | 0.2d | 2004-01-16 08:00 | 2004-01-16 09:36 | 2004-01-16 08:00 | 2004-01-16 09:36 | 0.2d | 87.8d | start no earlier than 2004-01-16 08:00 | 童海涛; 叶昊; 马越 | 4.8h |
| 275 | PM_PTO_WR-04 | 工作情况汇报表的填写 4 | 0.2d | 2004-01-23 08:00 | 2004-01-23 09:36 | 2004-01-23 08:00 | 2004-01-23 09:36 | 0.2d | 81.8d | start no earlier than 2004-01-23 08:00 | 童海涛; 叶昊 | 4.8h |
| 276 | PM_PTO_WR-05 | 工作情况汇报表的填写 5 | 0.2d | 2004-01-30 08:00 | 2004-01-30 09:36 | 2004-01-30 08:00 | 2004-01-30 09:36 | 0.2d | 74.8d | start no earlier than 2004-01-30 08:00 | 童海涛; 叶昊 | 3.2h |
| 277 | PM_PTO_WR-06 | 工作情况汇报表的填写 6 | 0.2d | 2004-02-06 08:00 | 2004-02-06 09:36 | 2004-02-06 08:00 | 2004-02-06 09:36 | 0.2d | 68.8d | start no earlier than 2004-02-06 08:00 | 童海涛; 叶昊 | 3.2h |
| 278 | PM_PTO_WR-07 | 工作情况汇报表的填写 7 | 0.2d | 2004-02-13 08:00 | 2004-02-13 09:36 | 2004-02-13 08:00 | 2004-02-13 09:36 | 0.2d | 63.8d | start no earlier than 2004-02-13 08:00 | 叶昊; 童海涛 | 3.2h |
| 279 | PM_PTO_WR-08 | 工作情况汇报表的填写 8 | 0.2d | 2004-02-20 08:00 | 2004-02-20 09:36 | 2004-02-20 08:00 | 2004-02-20 09:36 | 0.2d | 58.8d | start no earlier than 2004-02-20 08:00 | 童海涛; 叶昊 | 3.2h |
| 280 | PM_PTO_WR_09 | 工作情况汇报表的填写 9 | 0.2d | 2004-02-27 08:00 | 2004-02-27 09:36 | 2004-02-27 08:00 | 2004-02-27 09:36 | 0.2d | 53.8d | start no earlier than 2004-02-27 08:00 | 童海涛; 叶昊 | 3.2h |
| 281 | PM_PTO_WR_10 | 工作情况汇报表的填写 10 | 0.2d | 2004-03-05 08:00 | 2004-03-05 09:36 | 2004-03-05 08:00 | 2004-03-05 09:36 | 0.2d | 48.8d | start no earlier than 2004-03-05 08:00 | 童海涛; 叶昊; 马越 | 9.6h |
| 282 | PM_PTO_WR-11 | 工作情况汇报表的填写 11 | 0.2d | 2004-03-12 08:00 | 2004-03-12 09:36 | 2004-03-12 08:00 | 2004-03-12 09:36 | 0.2d | 43.8d | start no earlier than 2004-03-12 08:00 | 童海涛; 叶昊; 马越 | 9.6h |
| 283 | PM_PTO_WR-12 | 工作情况汇报表的填写 12 | 0.2d | 2004-03-19 08:00 | 2004-03-19 09:36 | 2004-03-19 08:00 | 2004-03-19 09:36 | 0.2d | 38.8d | start no earlier than 2004-03-19 08:00 | 童海涛 | 6.4h |
| 284 | PM_PTO_WR-13 | 工作情况汇报表的填写 13 | 0.2d | 2004-03-26 08:00 | 2004-03-26 09:36 | 2004-03-26 08:00 | 2004-03-26 09:36 | 0.2d | 33.8d | start no earlier than 2004-03-26 08:00 | 童海涛 | 6.4h |
| 285 | PM_PTO_WR-14 | 工作情况汇报表的填写 14 | 0.2d | 2004-04-02 08:00 | 2004-04-02 09:36 | 2004-04-02 08:00 | 2004-04-02 09:36 | 0.2d | 28.8d | start no earlier than 2004-04-02 08:00 | 童海涛 | 6.4h |
| 286 | PM_PTO_WR_15 | 工作情况汇报表的填写 15 | 0.2d | 2004-04-09 08:00 | 2004-04-09 09:36 | 2004-04-09 08:00 | 2004-04-09 09:36 | 0.2d | 23.8d | start no earlier than 2004-04-09 08:00 | 童海涛 | 8h |
| 287 | PM_PTO_WR_16 | 工作情况汇报表的填写 16 | 0.2d | 2004-04-16 08:00 | 2004-04-16 09:36 | 2004-04-16 08:00 | 2004-04-16 09:36 | 0.2d | 18.8d | start no earlier than 2004-04-16 08:00 | 童海涛 | 6.4h |
| 288 | PM_PTO_WR-17 | 工作情况汇报表的填写 17 | 0.2d | 2004-04-23 08:00 | 2004-04-23 09:36 | 2004-04-23 08:00 | 2004-04-23 09:36 | 0.2d | 13.8d | start no earlier than 2004-04-23 08:00 | 童海涛 | 6.4h |
| 289 | PM_PTO_WR_18 | 工作情况汇报表的填写 18 | 0.2d | 2004-04-30 08:00 | 2004-04-30 09:36 | 2004-04-30 08:00 | 2004-04-30 09:36 | 0.2d | 8.8d | start no earlier than 2004-04-30 08:00 | 童海涛 | 4.8h |
| 290 | PM_PTO_WR_19 | 工作情况汇报表的填写 19 | 0.2d | 2004-05-07 08:00 | 2004-05-07 09:36 | 2004-05-07 08:00 | 2004-05-07 09:36 | 0.2d | 3.8d | start no earlier than 2004-05-07 08:00 | 童海涛; 叶昊; 马越 | 12.8h |
| 291 | PM_PTO_PR | **项目状态报告表的填写** | 96.2d | 2004-01-05 08:00 | 2004-05-10 09:36 | 2004-01-05 08:00 | 2004-05-10 09:36 | 93.2d | 2.8d |  |  | 30.4h |
| 292 | PM_PTO_PR_01 | 项目状态报告表的填写 1 | 0.2d | 2004-01-05 08:00 | 2004-01-05 09:36 | 2004-01-05 08:00 | 2004-01-05 09:36 | 0.2d | 98.8d | start no earlier than 2004-01-05 08:00 | 童海涛 | 1.6h |
| 293 | PM_PTO_PR_02 | 项目状态报告表的填写 2 | 0.2d | 2004-01-12 08:00 | 2004-01-12 09:36 | 2004-01-12 08:00 | 2004-01-12 09:36 | 0.2d | 91.8d | start no earlier than 2004-01-12 08:00 | 童海涛 | 1.6h |
| 294 | PM_PTO_PR_03 | 项目状态报告表的填写 3 | 0.2d | 2004-01-19 08:00 | 2004-01-19 09:36 | 2004-01-19 08:00 | 2004-01-19 09:36 | 0.2d | 85.8d | start no earlier than 2004-01-19 08:00 | 童海涛 | 1.6h |
| 295 | PM_PTO_PR_04 | 项目状态报告表的填写 4 | 0.2d | 2004-01-26 08:00 | 2004-01-26 09:36 | 2004-01-26 08:00 | 2004-01-26 09:36 | 0.2d | 78.8d | start no earlier than 2004-01-26 08:00 | 童海涛 | 1.6h |
| 296 | PM_PTO_PR-05 | 项目状态报告表的填写 5 | 0.2d | 2004-02-02 08:00 | 2004-02-02 09:36 | 2004-02-02 08:00 | 2004-02-02 09:36 | 0.2d | 72.8d | start no earlier than 2004-02-02 08:00 | 童海涛 | 1.6h |
| 297 | PM_PTO_PR_06 | 项目状态报告表的填写 6 | 0.2d | 2004-02-09 08:00 | 2004-02-09 09:36 | 2004-02-09 08:00 | 2004-02-09 09:36 | 0.2d | 67.8d | start no earlier than 2004-02-09 08:00 | 童海涛 | 1.6h |
| 298 | PM_PTO_PR_07 | 项目状态报告表的填写 7 | 0.2d | 2004-02-16 08:00 | 2004-02-16 09:36 | 2004-02-16 08:00 | 2004-02-16 09:36 | 0.2d | 62.8d | start no earlier than 2004-02-16 08:00 | 童海涛 | 1.6h |
| 299 | PM_PTO_PR_08 | 项目状态报告表的填写 8 | 0.2d | 2004-02-23 08:00 | 2004-02-23 09:36 | 2004-02-23 08:00 | 2004-02-23 09:36 | 0.2d | 57.8d | start no earlier than 2004-02-23 08:00 | 童海涛 | 1.6h |
| 300 | PM_PTO_PR_09 | 项目状态报告表的填写 9 | 0.2d | 2004-03-01 08:00 | 2004-03-01 09:36 | 2004-03-01 08:00 | 2004-03-01 09:36 | 0.2d | 52.8d | start no earlier than 2004-03-01 08:00 | 童海涛 | 1.6h |
| 301 | PM_PTO_PR_10 | 项目状态报告表的填写 10 | 0.2d | 2004-03-08 08:00 | 2004-03-08 09:36 | 2004-03-08 08:00 | 2004-03-08 09:36 | 0.2d | 47.8d | start no earlier than 2004-03-08 08:00 | 童海涛 | 1.6h |
| 302 | PM_PTO_PR_11 | 项目状态报告表的填写 11 | 0.2d | 2004-03-15 08:00 | 2004-03-15 09:36 | 2004-03-15 08:00 | 2004-03-15 09:36 | 0.2d | 42.8d | start no earlier than 2004-03-15 08:00 | 童海涛 | 1.6h |
| 303 | PM_PTO_PR_12 | 项目状态报告表的填写 12 | 0.2d | 2004-03-22 08:00 | 2004-03-22 09:36 | 2004-03-22 08:00 | 2004-03-22 09:36 | 0.2d | 37.8d | start no earlier than 2004-03-22 08:00 | 童海涛 | 1.6h |
| 304 | PM_PTO_PR_13 | 项目状态报告表的填写 13 | 0.2d | 2004-03-29 08:00 | 2004-03-29 09:36 | 2004-03-29 08:00 | 2004-03-29 09:36 | 0.2d | 32.8d | start no earlier than 2004-03-29 08:00 | 童海涛 | 1.6h |
| 305 | PM_PTO_PR-14 | 项目状态报告表的填写 14 | 0.2d | 2004-04-05 08:00 | 2004-04-05 09:36 | 2004-04-05 08:00 | 2004-04-05 09:36 | 0.2d | 27.8d | start no earlier than 2004-04-05 08:00 | 童海涛 | 1.6h |
| 306 | PM_PTO_PR-15 | 项目状态报告表的填写 15 | 0.2d | 2004-04-12 08:00 | 2004-04-12 09:36 | 2004-04-12 08:00 | 2004-04-12 09:36 | 0.2d | 22.8d | start no earlier than 2004-04-12 08:00 | 童海涛 | 1.6h |
| 307 | PM_PTO_PR-16 | 项目状态报告表的填写 16 | 0.2d | 2004-04-19 08:00 | 2004-04-19 09:36 | 2004-04-19 08:00 | 2004-04-19 09:36 | 0.2d | 17.8d | start no earlier than 2004-04-19 08:00 | 童海涛 | 1.6h |
| 308 | PM_PTO_PR-17 | 项目状态报告表的填写 17 | 0.2d | 2004-04-26 08:00 | 2004-04-26 09:36 | 2004-04-26 08:00 | 2004-04-26 09:36 | 0.2d | 12.8d | start no earlier than 2004-04-26 08:00 | 童海涛 | 1.6h |
| 309 | PM_PTO_PR_18 | 项目状态报告表的填写 18 | 0.2d | 2004-05-03 08:00 | 2004-05-03 09:36 | 2004-05-03 08:00 | 2004-05-03 09:36 | 0.2d | 7.8d | start no earlier than 2004-05-03 08:00 | 童海涛 | 1.6h |
| 310 | PM_PTO_PR_19 | 项目状态报告表的填写 19 | 0.2d | 2004-05-10 08:00 | 2004-05-10 09:36 | 2004-05-10 08:00 | 2004-05-10 09:36 | 0.2d | 2.8d | start no earlier than 2004-05-10 08:00 | 童海涛 | 1.6h |

| ID | WBS | Task | Type | Duration | Start | Finish | Predecessors | Baseline start | Baseline finish | Baseline duration | Total slack | Constraint | Resources | Work |
| --- | --- | --- | --- | --- | --- | --- | --- | --- | --- | --- | --- | --- | --- | --- |
| 311 | PM_RiskM | **风险管理** |  | 19d | 2003-10-17 08:00 | 2003-11-05 17:00 |  | 2003-10-17 08:00 | 2003-11-05 17:00 | 19d | 159d |  |  | 16h |
| 312 | PM_RiskM_01 | 风险管理计划表的填写 |  | 1d | 2003-11-05 08:00 | 2003-11-05 17:00 | 260FS-1d | 2003-11-05 08:00 | 2003-11-05 17:00 | 1d | 159d |  | 童海涛 | 8h |
| 313 | PM_RiskM-02 | **风险的跟踪** |  | 1d | 2003-10-17 08:00 | 2003-10-17 17:00 |  | 2003-10-17 08:00 | 2003-10-17 17:00 | 1d | 177d |  | 童海涛 | 8h |
| 314 | PM_EM | 工程管理 |  | 1d | 2003-10-17 08:00 | 2003-10-17 17:00 |  | 2003-10-17 08:00 | 2003-10-17 17:00 | 1d | 177d |  |  |  |
| 315 | PS | **组织支持过程** |  | 127d | 2003-10-17 08:00 | 2004-03-02 17:00 |  | 2003-10-17 08:00 | 2004-03-02 17:00 | 124d | 51d |  |  | 277.6h |
| 316 | PS_CM | 配置管理 |  | 10d | 2004-02-18 08:00 | 2004-03-02 17:00 |  | 2004-02-18 08:00 | 2004-03-02 17:00 | 10d | 51d | finish no earlier than 2004-03-02 17:00 |  | 80h |
| 317 | PS_QA | 质量保证 |  | 15d | 2004-02-11 08:00 | 2004-03-02 17:00 |  | 2004-02-11 08:00 | 2004-03-02 17:00 | 15d | 51d | finish no earlier than 2004-03-02 17:00 | 马越 | 120h |
| 318 | PS_OM | 子合同管理 | milestone | 0d | 2003-11-07 08:00 | 2003-11-07 17:00 |  | 2003-11-07 08:00 | 2003-11-07 17:00 | 0d | 157d | start no earlier than 2003-11-07 00:00 |  |  |
| 319 | PS_TP | 培训大纲 |  | 2.85d | 2004-02-03 09:12 | 2004-02-05 17:00 |  | 2004-02-03 09:12 | 2004-02-05 17:00 | 2.85d | 69d | finish no earlier than 2004-02-05 17:00 | 童海涛; 马越 | 45.6h |
| 320 | PS_MA | 度量与分析 |  | 2d | 2003-10-17 08:00 | 2003-10-18 17:00 |  | 2003-10-17 08:00 | 2003-10-18 17:00 | 2d | 176d |  | 童海涛; 马越 | 32h |
| 321 | PS_SM | 客服与维护 |  | 1d | 2003-10-17 08:00 | 2003-10-17 17:00 |  | 2003-10-17 08:00 | 2003-10-17 17:00 | 1d | 177d |  |  |  |
