# 阶段性个人工作计划_郑先全

Schedule from MS Project, 2003-11-12 to 2003-11-28.
杭州市规划局

## Calendars

- 标准: Mon-Fri 08:00-12:00, 13:00-17:00; Sat-Sun off.

## Resources

| Resource |
| --- |
| 郑先全 |

## Schedule

| ID | Task | Duration | Start | Finish | Predecessors | Total slack | Free slack | Constraint | Resources | Work |
| --- | --- | --- | --- | --- | --- | --- | --- | --- | --- | --- |
| 1 | 编写概要设计－采集部分 | 0.4d | 2003-11-12 08:00 | 2003-11-12 11:12 |  | 0.5d | 0d | start no earlier than 2003-11-12 08:00 | 郑先全 | 3.2h |
| 2 | 编写概要设计－利用部分 | 0.4d | 2003-11-12 11:12 | 2003-11-12 15:24 | 1 | 0.5d | 0d | start no earlier than 2003-11-12 08:00 | 郑先全 | 3.2h |
| 3 | 整合概要设计 | 0.2d | 2003-11-12 15:24 | 2003-11-12 17:00 | 2 | 0.5d | 0d | start no earlier than 2003-11-12 08:00 | 郑先全 | 1.6h |
| 4 | 审核概要设计 | 0.5d | 2003-11-13 08:00 | 2003-11-13 12:00 | 3 | 0.5d | 0d | start no earlier than 2003-11-13 08:00 | 郑先全 | 4h |
| 5 | 编写数据库设计说明书和ER图 | 3.5d | 2003-11-13 13:00 | 2003-11-18 17:00 | 4 | 0.5d | 0d | start no earlier than 2003-11-13 08:00 | 郑先全 | 28h |
| 6 | OA接口方案的细化和定稿 | 2d | 2003-11-19 08:00 | 2003-11-20 17:00 | 5 | 0.5d |  | start no earlier than 2003-11-17 08:00 | 郑先全 | 16h |
| 7 | 项目例会 | 0.5d | 2003-11-18 08:00 | 2003-11-18 12:00 |  | 0d |  | start no earlier than 2003-11-18 08:00 | 郑先全 | 4h |
| 8 | 数据库脚本（创建、初始化、测试数据）的生成 | 2d | 2003-11-18 13:00 | 2003-11-20 12:00 | 7 | 0d |  | start no earlier than 2003-11-18 08:00 | 郑先全 | 16h |
| 9 | 系统原型的构建 | 1d | 2003-11-20 13:00 | 2003-11-21 12:00 | 8 | 0d |  |  | 郑先全 | 8h |
| 10 | 详细设计文档的编写_利用部分 | 2d | 2003-11-21 13:00 | 2003-11-25 12:00 | 9 | 0d |  |  | 郑先全 | 16h |
| 11 | 详细设计文档的编写_采集部分 | 1d | 2003-11-25 13:00 | 2003-11-26 12:00 | 10 | 0d |  |  | 郑先全 | 8h |
| 12 | 详细设计文档的评审 | 1d | 2003-11-26 13:00 | 2003-11-27 12:00 | 11 | 0d |  |  | 郑先全 | 8h |
| 13 | 详细设计文档的修订完善 | 1d | 2003-11-27 13:00 | 2003-11-28 12:00 | 12 | 0d |  |  | 郑先全 | 8h |
